# C&C++_ProjectSchedule_v0.1

Schedule from MS Project, 2012-08-21 to 2012-10-04.

## Calendars

- Standard: Mon-Fri 08:00-12:00, 13:00-17:00; Sat-Sun off. Exceptions (off unless hours are given): 2012-09-03 (Nghi).

## Resources

| Resource |
| --- |
| PM |
| DevTeam |
| Test1 |
| Dev1 |
| Dev2 |
| Dev3 |
| Dev4 |
| Dev5 |
| Dev6 |
| Dev7 |

## Schedule

| ID | WBS | Task | Duration | Start | Finish | Predecessors | Total slack | Free slack | Constraint | Resources | Work |
| --- | --- | --- | --- | --- | --- | --- | --- | --- | --- | --- | --- |
| 1 | 1 | **MOCK_C&C++** | 31.88d | 2012-08-21 08:00 | 2012-10-04 16:00 |  | 0d |  |  |  | 2948h |
| 2 | 1.1 | **Definition & Solution** | 1d | 2012-08-21 08:00 | 2012-08-21 17:00 |  | 0d |  |  |  | 14h |
| 3 | 1.1.1 | Study overview designs | 0.5d | 2012-08-21 08:00 | 2012-08-21 12:00 |  | 0d |  | start no earlier than 2012-08-21 08:00 | DevTeam; Test1 | 8h |
| 4 | 1.1.2 | Build up pseudo code scheletons | 0.25d | 2012-08-21 13:00 | 2012-08-21 15:00 | 3 | 0d |  |  | DevTeam | 2h |
| 5 | 1.1.3 | Brainstorming: design & conventions | 0.25d | 2012-08-21 15:00 | 2012-08-21 17:00 | 4 | 0d |  |  | PM; DevTeam | 4h |
| 6 | 1.2 | **Construction** | 30d | 2012-08-22 08:00 | 2012-10-03 17:00 |  | 0d |  |  |  | 2920h |
| 7 | 1.2.1 | **Iteration 1** | 10d | 2012-08-22 08:00 | 2012-09-05 17:00 |  | 0d |  |  |  | 1024h |
| 8 | 1.2.1.1 | **Create Main form** | 9d | 2012-08-22 08:00 | 2012-09-04 17:00 |  | 21.88d |  |  | Dev1 | 144h |
| 9 | 1.2.1.1.1 | Study requirement | 0.5d | 2012-08-22 08:00 | 2012-08-22 12:00 | 5 | 21.88d | 0d |  | Dev1 | 4h |
| 10 | 1.2.1.1.2 | Prepare GUI prototypes | 0.5d | 2012-08-22 13:00 | 2012-08-22 17:00 | 9 | 21.88d | 0d |  | Dev1 | 4h |
| 11 | 1.2.1.1.3 | Study design & prepare pseudo codes | 0.75d | 2012-08-23 08:00 | 2012-08-23 15:00 | 10 | 21.88d | 0d |  | Dev1 | 6h |
| 12 | 1.2.1.1.4 | Prepare UT case document | 0.25d | 2012-08-23 15:00 | 2012-08-23 17:00 | 11 | 21.88d | 0d |  | Dev1 | 2h |
| 13 | 1.2.1.1.5 | Create Menu, status bar, tool bar | 3d | 2012-08-24 08:00 | 2012-08-28 17:00 | 12 | 21.88d | 0d |  | Dev1 | 24h |
| 14 | 1.2.1.1.6 | Self code review & Fix bugs | 0.5d | 2012-08-29 08:00 | 2012-08-29 12:00 | 13 | 21.88d | 0d |  | Dev1 | 4h |
| 15 | 1.2.1.1.7 | Peer code review & Fix bugs | 0.5d | 2012-08-29 13:00 | 2012-08-29 17:00 | 14 | 21.88d | 0d |  | Dev1 | 4h |
| 16 | 1.2.1.1.8 | Update UT case document | 1d | 2012-08-30 08:00 | 2012-08-30 17:00 | 15 | 21.88d | 0d |  | Dev1 | 8h |
| 17 | 1.2.1.1.9 | Prepare UT scripts | 1d | 2012-08-31 08:00 | 2012-08-31 17:00 | 16 | 21.88d | 0d |  | Dev1 | 8h |
| 18 | 1.2.1.1.10 | Perform UT & Fix bugs | 1d | 2012-09-04 08:00 | 2012-09-04 17:00 | 17 | 21.88d |  |  | Dev1 | 8h |
| 19 | 1.2.1.2 | **Create Combo box on Main form** | 9d | 2012-08-22 08:00 | 2012-09-04 17:00 |  | 21.88d |  |  | Dev2 | 144h |
| 20 | 1.2.1.2.1 | Study requirement | 0.5d | 2012-08-22 08:00 | 2012-08-22 12:00 | 5 | 21.88d | 0d |  | Dev2 | 4h |
| 21 | 1.2.1.2.2 | Prepare GUI prototypes | 0.5d | 2012-08-22 13:00 | 2012-08-22 17:00 | 20 | 21.88d | 0d |  | Dev2 | 4h |
| 22 | 1.2.1.2.3 | Study design & prepare pseudo codes | 0.75d | 2012-08-23 08:00 | 2012-08-23 15:00 | 21 | 21.88d | 0d |  | Dev2 | 6h |
| 23 | 1.2.1.2.4 | Prepare UT case document | 0.25d | 2012-08-23 15:00 | 2012-08-23 17:00 | 22 | 21.88d | 0d |  | Dev2 | 2h |
| 24 | 1.2.1.2.5 | Create Combo box | 3d | 2012-08-24 08:00 | 2012-08-28 17:00 | 23 | 21.88d | 0d |  | Dev2 | 24h |
| 25 | 1.2.1.2.6 | Self code review & Fix bugs | 0.5d | 2012-08-29 08:00 | 2012-08-29 12:00 | 24 | 21.88d | 0d |  | Dev2 | 4h |
| 26 | 1.2.1.2.7 | Peer code review & Fix bugs | 0.5d | 2012-08-29 13:00 | 2012-08-29 17:00 | 25 | 21.88d | 0d |  | Dev2 | 4h |
| 27 | 1.2.1.2.8 | Update UT case document | 1d | 2012-08-30 08:00 | 2012-08-30 17:00 | 26 | 21.88d | 0d |  | Dev2 | 8h |
| 28 | 1.2.1.2.9 | Prepare UT scripts | 1d | 2012-08-31 08:00 | 2012-08-31 17:00 | 27 | 21.88d | 0d |  | Dev2 | 8h |
| 29 | 1.2.1.2.10 | Perform UT & Fix bugs | 1d | 2012-09-04 08:00 | 2012-09-04 17:00 | 28 | 21.88d |  |  | Dev2 | 8h |

| ID | WBS | Task | Duration | Start | Finish | Predecessors | Total slack | Free slack | Resources | Work |
| --- | --- | --- | --- | --- | --- | --- | --- | --- | --- | --- |
| 30 | 1.2.1.3 | **Create Edit box on main form** | 9d | 2012-08-22 08:00 | 2012-09-04 17:00 |  | 21.88d |  | Dev3 | 144h |
| 31 | 1.2.1.3.1 | Study requirement | 0.5d | 2012-08-22 08:00 | 2012-08-22 12:00 | 5 | 21.88d | 0d | Dev3 | 4h |
| 32 | 1.2.1.3.2 | Prepare GUI prototypes | 0.5d | 2012-08-22 13:00 | 2012-08-22 17:00 | 31 | 21.88d | 0d | Dev3 | 4h |
| 33 | 1.2.1.3.3 | Study design & prepare pseudo codes | 0.75d | 2012-08-23 08:00 | 2012-08-23 15:00 | 32 | 21.88d | 0d | Dev3 | 6h |
| 34 | 1.2.1.3.4 | Prepare UT case document | 0.25d | 2012-08-23 15:00 | 2012-08-23 17:00 | 33 | 21.88d | 0d | Dev3 | 2h |
| 35 | 1.2.1.3.5 | Create Edit box on main form | 1d | 2012-08-24 08:00 | 2012-08-24 17:00 | 34 | 21.88d | 0d | Dev3 | 8h |
| 36 | 1.2.1.3.6 | Code Search function | 2d | 2012-08-27 08:00 | 2012-08-28 17:00 | 35 | 21.88d | 0d | Dev3 | 16h |
| 37 | 1.2.1.3.7 | Self code review & Fix bugs | 0.5d | 2012-08-29 08:00 | 2012-08-29 12:00 | 36 | 21.88d | 0d | Dev3 | 4h |
| 38 | 1.2.1.3.8 | Peer code review & Fix bugs | 0.5d | 2012-08-29 13:00 | 2012-08-29 17:00 | 37 | 21.88d | 0d | Dev3 | 4h |
| 39 | 1.2.1.3.9 | Update UT case document | 1d | 2012-08-30 08:00 | 2012-08-30 17:00 | 38 | 21.88d | 0d | Dev3 | 8h |
| 40 | 1.2.1.3.10 | Prepare UT scripts | 1d | 2012-08-31 08:00 | 2012-08-31 17:00 | 39 | 21.88d | 0d | Dev3 | 8h |
| 41 | 1.2.1.3.11 | Perform UT & Fix bugs | 1d | 2012-09-04 08:00 | 2012-09-04 17:00 | 40 | 21.88d |  | Dev3 | 8h |
| 42 | 1.2.1.4 | **Sort data on Listview** | 9d | 2012-08-22 08:00 | 2012-09-04 17:00 |  | 21.88d |  | Dev5 | 144h |
| 43 | 1.2.1.4.1 | Study requirement | 0.5d | 2012-08-22 08:00 | 2012-08-22 12:00 | 5 | 21.88d | 0d | Dev5 | 4h |
| 44 | 1.2.1.4.2 | Prepare GUI prototypes | 0.5d | 2012-08-22 13:00 | 2012-08-22 17:00 | 43 | 21.88d | 0d | Dev5 | 4h |
| 45 | 1.2.1.4.3 | Study design & prepare pseudo codes | 0.75d | 2012-08-23 08:00 | 2012-08-23 15:00 | 44 | 21.88d | 0d | Dev5 | 6h |
| 46 | 1.2.1.4.4 | Prepare UT case document | 0.25d | 2012-08-23 15:00 | 2012-08-23 17:00 | 45 | 21.88d | 0d | Dev5 | 2h |
| 47 | 1.2.1.4.5 | Sort data on Listview | 3d | 2012-08-24 08:00 | 2012-08-28 17:00 | 46 | 21.88d | 0d | Dev5 | 24h |
| 48 | 1.2.1.4.6 | Self code review & Fix bugs | 0.5d | 2012-08-29 08:00 | 2012-08-29 12:00 | 47 | 21.88d | 0d | Dev5 | 4h |
| 49 | 1.2.1.4.7 | Peer code review & Fix bugs | 0.5d | 2012-08-29 13:00 | 2012-08-29 17:00 | 48 | 21.88d | 0d | Dev5 | 4h |
| 50 | 1.2.1.4.8 | Update UT case document | 1d | 2012-08-30 08:00 | 2012-08-30 17:00 | 49 | 21.88d | 0d | Dev5 | 8h |
| 51 | 1.2.1.4.9 | Prepare UT scripts | 1d | 2012-08-31 08:00 | 2012-08-31 17:00 | 50 | 21.88d | 0d | Dev5 | 8h |
| 52 | 1.2.1.4.10 | Perform UT & Fix bugs | 1d | 2012-09-04 08:00 | 2012-09-04 17:00 | 51 | 21.88d |  | Dev5 | 8h |
| 53 | 1.2.1.5 | **Create Popup menu function** | 9d | 2012-08-22 08:00 | 2012-09-04 17:00 |  | 21.88d |  | Dev7 | 144h |
| 54 | 1.2.1.5.1 | Study requirement | 0.5d | 2012-08-22 08:00 | 2012-08-22 12:00 | 5 | 21.88d | 0d | Dev7 | 4h |
| 55 | 1.2.1.5.2 | Prepare GUI prototypes | 0.5d | 2012-08-22 13:00 | 2012-08-22 17:00 | 54 | 21.88d | 0d | Dev7 | 4h |
| 56 | 1.2.1.5.3 | Study design & prepare pseudo codes | 0.75d | 2012-08-23 08:00 | 2012-08-23 15:00 | 55 | 21.88d | 0d | Dev7 | 6h |
| 57 | 1.2.1.5.4 | Prepare UT case document | 0.25d | 2012-08-23 15:00 | 2012-08-23 17:00 | 56 | 21.88d | 0d | Dev7 | 2h |
| 58 | 1.2.1.5.5 | Code popup menu | 3d | 2012-08-24 08:00 | 2012-08-28 17:00 | 57 | 21.88d | 0d | Dev7 | 24h |
| 59 | 1.2.1.5.6 | Self code review & Fix bugs | 0.5d | 2012-08-29 08:00 | 2012-08-29 12:00 | 58 | 21.88d | 0d | Dev7 | 4h |
| 60 | 1.2.1.5.7 | Peer code review & Fix bugs | 0.5d | 2012-08-29 13:00 | 2012-08-29 17:00 | 59 | 21.88d | 0d | Dev7 | 4h |
| 61 | 1.2.1.5.8 | Update UT case document | 1d | 2012-08-30 08:00 | 2012-08-30 17:00 | 60 | 21.88d | 0d | Dev7 | 8h |
| 62 | 1.2.1.5.9 | Prepare UT scripts | 1d | 2012-08-31 08:00 | 2012-08-31 17:00 | 61 | 21.88d | 0d | Dev7 | 8h |
| 63 | 1.2.1.5.10 | Perform UT & Fix bugs | 1d | 2012-09-04 08:00 | 2012-09-04 17:00 | 62 | 21.88d |  | Dev7 | 8h |

| ID | WBS | Task | Duration | Start | Finish | Predecessors | Total slack | Free slack | Resources | Work |
| --- | --- | --- | --- | --- | --- | --- | --- | --- | --- | --- |
| 64 | 1.2.1.6 | **Create Treeview** | 9d | 2012-08-22 08:00 | 2012-09-04 17:00 |  | 21.88d |  | Dev4 | 144h |
| 65 | 1.2.1.6.1 | Study requirement | 0.5d | 2012-08-22 08:00 | 2012-08-22 12:00 | 5 | 21.88d | 0d | Dev4 | 4h |
| 66 | 1.2.1.6.2 | Prepare GUI prototypes | 0.5d | 2012-08-22 13:00 | 2012-08-22 17:00 | 65 | 21.88d | 0d | Dev4 | 4h |
| 67 | 1.2.1.6.3 | Study design & prepare pseudo codes | 0.75d | 2012-08-23 08:00 | 2012-08-23 15:00 | 66 | 21.88d | 0d | Dev4 | 6h |
| 68 | 1.2.1.6.4 | Prepare UT case document | 0.25d | 2012-08-23 15:00 | 2012-08-23 17:00 | 67 | 21.88d | 0d | Dev4 | 2h |
| 69 | 1.2.1.6.5 | Create Treeview on main form | 3d | 2012-08-24 08:00 | 2012-08-28 17:00 | 68 | 21.88d | 0d | Dev4 | 24h |
| 70 | 1.2.1.6.6 | Self code review & Fix bugs | 0.5d | 2012-08-29 08:00 | 2012-08-29 12:00 | 69 | 21.88d | 0d | Dev4 | 4h |
| 71 | 1.2.1.6.7 | Peer code review & Fix bugs | 0.5d | 2012-08-29 13:00 | 2012-08-29 17:00 | 70 | 21.88d | 0d | Dev4 | 4h |
| 72 | 1.2.1.6.8 | Update UT case document | 1d | 2012-08-30 08:00 | 2012-08-30 17:00 | 71 | 21.88d | 0d | Dev4 | 8h |
| 73 | 1.2.1.6.9 | Prepare UT scripts | 1d | 2012-08-31 08:00 | 2012-08-31 17:00 | 72 | 21.88d | 0d | Dev4 | 8h |
| 74 | 1.2.1.6.10 | Perform UT & Fix bugs | 1d | 2012-09-04 08:00 | 2012-09-04 17:00 | 73 | 21.88d |  | Dev4 | 8h |
| 75 | 1.2.1.7 | **Create Listview** | 9d | 2012-08-22 08:00 | 2012-09-04 17:00 |  | 0d |  | Dev6 | 144h |
| 76 | 1.2.1.7.1 | Study requirement | 0.5d | 2012-08-22 08:00 | 2012-08-22 12:00 | 5 | 0d |  | Dev6 | 4h |
| 77 | 1.2.1.7.2 | Prepare GUI prototypes | 0.5d | 2012-08-22 13:00 | 2012-08-22 17:00 | 76 | 0d |  | Dev6 | 4h |
| 78 | 1.2.1.7.3 | Study design & prepare pseudo codes | 0.75d | 2012-08-23 08:00 | 2012-08-23 15:00 | 77 | 0d |  | Dev6 | 6h |
| 79 | 1.2.1.7.4 | Prepare UT case document | 0.25d | 2012-08-23 15:00 | 2012-08-23 17:00 | 78 | 0d |  | Dev6 | 2h |
| 80 | 1.2.1.7.5 | Create Listview | 3d | 2012-08-24 08:00 | 2012-08-28 17:00 | 79 | 0d |  | Dev6 | 24h |
| 81 | 1.2.1.7.6 | Self code review & Fix bugs | 0.5d | 2012-08-29 08:00 | 2012-08-29 12:00 | 80 | 0d |  | Dev6 | 4h |
| 82 | 1.2.1.7.7 | Peer code review & Fix bugs | 0.5d | 2012-08-29 13:00 | 2012-08-29 17:00 | 81 | 0d |  | Dev6 | 4h |
| 83 | 1.2.1.7.8 | Update UT case document | 1d | 2012-08-30 08:00 | 2012-08-30 17:00 | 82 | 0d |  | Dev6 | 8h |
| 84 | 1.2.1.7.9 | Prepare UT scripts | 1d | 2012-08-31 08:00 | 2012-08-31 17:00 | 83 | 0d |  | Dev6 | 8h |
| 85 | 1.2.1.7.10 | Perform UT & Fix bugs | 1d | 2012-09-04 08:00 | 2012-09-04 17:00 | 84 | 0d |  | Dev6 | 8h |
| 86 | 1.2.1.8 | Milestone 1 | 1d | 2012-09-05 08:00 | 2012-09-05 17:00 | 85 | 0d |  | PM; DevTeam | 16h |
| 87 | 1.2.2 | **Iteration 2** | 10d | 2012-09-06 08:00 | 2012-09-19 17:00 |  | 0d |  |  | 1016h |
| 88 | 1.2.2.1 | **Create main form (cont)** | 9d | 2012-09-06 08:00 | 2012-09-18 17:00 |  | 11.88d |  | Dev1 | 144h |
| 89 | 1.2.2.1.1 | Study requirement | 0.5d | 2012-09-06 08:00 | 2012-09-06 12:00 | 86 | 11.88d | 0d | Dev1 | 4h |
| 90 | 1.2.2.1.2 | Prepare GUI prototypes | 0.5d | 2012-09-06 13:00 | 2012-09-06 17:00 | 89 | 11.88d | 0d | Dev1 | 4h |
| 91 | 1.2.2.1.3 | Study design & prepare pseudo codes | 0.75d | 2012-09-07 08:00 | 2012-09-07 15:00 | 90 | 11.88d | 0d | Dev1 | 6h |
| 92 | 1.2.2.1.4 | Prepare UT case document | 0.25d | 2012-09-07 15:00 | 2012-09-07 17:00 | 91 | 11.88d | 0d | Dev1 | 2h |
| 93 | 1.2.2.1.5 | Create Splitter | 3d | 2012-09-10 08:00 | 2012-09-12 17:00 | 92 | 11.88d | 0d | Dev1 | 24h |
| 94 | 1.2.2.1.6 | Self code review & Fix bugs | 0.5d | 2012-09-13 08:00 | 2012-09-13 12:00 | 93 | 11.88d | 0d | Dev1 | 4h |
| 95 | 1.2.2.1.7 | Peer code review & Fix bugs | 0.5d | 2012-09-13 13:00 | 2012-09-13 17:00 | 94 | 11.88d | 0d | Dev1 | 4h |
| 96 | 1.2.2.1.8 | Update UT case document | 1d | 2012-09-14 08:00 | 2012-09-14 17:00 | 95 | 11.88d | 0d | Dev1 | 8h |
| 97 | 1.2.2.1.9 | Prepare UT scripts | 1d | 2012-09-17 08:00 | 2012-09-17 17:00 | 96 | 11.88d | 0d | Dev1 | 8h |
| 98 | 1.2.2.1.10 | Perform UT & Fix bugs | 1d | 2012-09-18 08:00 | 2012-09-18 17:00 | 97 | 11.88d |  | Dev1 | 8h |

| ID | WBS | Task | Duration | Start | Finish | Predecessors | Total slack | Free slack | Constraint | Resources | Work |
| --- | --- | --- | --- | --- | --- | --- | --- | --- | --- | --- | --- |
| 99 | 1.2.2.2 | **Create Combo box on Main form (cont)** | 9d | 2012-09-06 08:00 | 2012-09-18 17:00 |  | 11.88d |  |  | Dev2 | 144h |
| 100 | 1.2.2.2.1 | Study requirement | 0.5d | 2012-09-06 08:00 | 2012-09-06 12:00 | 86 | 11.88d | 0d |  | Dev2 | 4h |
| 101 | 1.2.2.2.2 | Prepare GUI prototypes | 0.5d | 2012-09-06 13:00 | 2012-09-06 17:00 | 100 | 11.88d | 0d |  | Dev2 | 4h |
| 102 | 1.2.2.2.3 | Study design & prepare pseudo codes | 0.75d | 2012-09-07 08:00 | 2012-09-07 15:00 | 101 | 11.88d | 0d |  | Dev2 | 6h |
| 103 | 1.2.2.2.4 | Prepare UT case document | 0.25d | 2012-09-07 15:00 | 2012-09-07 17:00 | 102 | 11.88d | 0d |  | Dev2 | 2h |
| 104 | 1.2.2.2.5 | Fill data on Combo box | 3d | 2012-09-10 08:00 | 2012-09-12 17:00 | 103 | 11.88d | 0d |  | Dev2 | 24h |
| 105 | 1.2.2.2.6 | Self code review & Fix bugs | 0.5d | 2012-09-13 08:00 | 2012-09-13 12:00 | 104 | 11.88d | 0d |  | Dev2 | 4h |
| 106 | 1.2.2.2.7 | Peer code review & Fix bugs | 0.5d | 2012-09-13 13:00 | 2012-09-13 17:00 | 105 | 11.88d | 0d |  | Dev2 | 4h |
| 107 | 1.2.2.2.8 | Update UT case document | 1d | 2012-09-14 08:00 | 2012-09-14 17:00 | 106 | 11.88d | 0d |  | Dev2 | 8h |
| 108 | 1.2.2.2.9 | Prepare UT scripts | 1d | 2012-09-17 08:00 | 2012-09-17 17:00 | 107 | 11.88d | 0d |  | Dev2 | 8h |
| 109 | 1.2.2.2.10 | Perform UT & Fix bugs | 1d | 2012-09-18 08:00 | 2012-09-18 17:00 | 108 | 11.88d |  |  | Dev2 | 8h |
| 110 | 1.2.2.3 | **Create search function** | 9d | 2012-09-06 08:00 | 2012-09-18 17:00 |  | 11.88d |  |  | Dev1 | 144h |
| 111 | 1.2.2.3.1 | Study requirement | 0.5d | 2012-09-06 08:00 | 2012-09-06 12:00 | 86 | 11.88d | 0d |  | Dev1 | 4h |
| 112 | 1.2.2.3.2 | Prepare GUI prototypes | 0.5d | 2012-09-06 13:00 | 2012-09-06 17:00 | 111 | 11.88d | 0d |  | Dev1 | 4h |
| 113 | 1.2.2.3.3 | Study design & prepare pseudo codes | 0.75d | 2012-09-07 08:00 | 2012-09-07 15:00 | 112 | 11.88d | 0d |  | Dev1 | 6h |
| 114 | 1.2.2.3.4 | Prepare UT case document | 0.25d | 2012-09-07 15:00 | 2012-09-07 17:00 | 113 | 11.88d | 0d |  | Dev1 | 2h |
| 115 | 1.2.2.3.5 | Create search function | 3d | 2012-09-10 08:00 | 2012-09-12 17:00 | 114 | 11.88d | 0d |  | Dev1 | 24h |
| 116 | 1.2.2.3.6 | Self code review & Fix bugs | 0.5d | 2012-09-13 08:00 | 2012-09-13 12:00 | 115 | 11.88d | 0d |  | Dev1 | 4h |
| 117 | 1.2.2.3.7 | Peer code review & Fix bugs | 0.5d | 2012-09-13 13:00 | 2012-09-13 17:00 | 116 | 11.88d | 0d |  | Dev1 | 4h |
| 118 | 1.2.2.3.8 | Update UT case document | 1d | 2012-09-14 08:00 | 2012-09-14 17:00 | 117 | 11.88d | 0d |  | Dev1 | 8h |
| 119 | 1.2.2.3.9 | Prepare UT scripts | 1d | 2012-09-17 08:00 | 2012-09-17 17:00 | 118 | 11.88d | 0d |  | Dev1 | 8h |
| 120 | 1.2.2.3.10 | Perform UT & Fix bugs | 1d | 2012-09-18 08:00 | 2012-09-18 17:00 | 119 | 11.88d |  |  | Dev1 | 8h |
| 121 | 1.2.2.4 | **Change view data in listview** | 9d | 2012-09-06 08:00 | 2012-09-18 17:00 |  | 11.88d |  |  | Dev5 | 144h |
| 122 | 1.2.2.4.1 | Study requirement | 0.5d | 2012-09-06 08:00 | 2012-09-06 12:00 | 86 | 11.88d | 0d | start no earlier than 2012-09-06 08:00 | Dev5 | 4h |
| 123 | 1.2.2.4.2 | Prepare GUI prototypes | 0.5d | 2012-09-06 13:00 | 2012-09-06 17:00 | 122 | 11.88d | 0d | start no earlier than 2012-09-06 13:00 | Dev5 | 4h |
| 124 | 1.2.2.4.3 | Study design & prepare pseudo codes | 0.75d | 2012-09-07 08:00 | 2012-09-07 15:00 | 123 | 11.88d | 0d | start no earlier than 2012-09-07 08:00 | Dev5 | 6h |
| 125 | 1.2.2.4.4 | Prepare UT case document | 0.25d | 2012-09-07 15:00 | 2012-09-07 17:00 | 124 | 11.88d | 0d | start no earlier than 2012-09-07 15:00 | Dev5 | 2h |
| 126 | 1.2.2.4.5 | Change view data in listview | 3d | 2012-09-10 08:00 | 2012-09-12 17:00 | 125 | 11.88d | 0d | start no earlier than 2012-09-10 08:00 | Dev5 | 24h |
| 127 | 1.2.2.4.6 | Self code review & Fix bugs | 0.5d | 2012-09-13 08:00 | 2012-09-13 12:00 | 126 | 11.88d | 0d | start no earlier than 2012-09-13 08:00 | Dev5 | 4h |
| 128 | 1.2.2.4.7 | Peer code review & Fix bugs | 0.5d | 2012-09-13 13:00 | 2012-09-13 17:00 | 127 | 11.88d | 0d | start no earlier than 2012-09-13 13:00 | Dev5 | 4h |
| 129 | 1.2.2.4.8 | Update UT case document | 1d | 2012-09-14 08:00 | 2012-09-14 17:00 | 128 | 11.88d | 0d | start no earlier than 2012-09-14 08:00 | Dev5 | 8h |
| 130 | 1.2.2.4.9 | Prepare UT scripts | 1d | 2012-09-17 08:00 | 2012-09-17 17:00 | 129 | 11.88d | 0d | start no earlier than 2012-09-17 08:00 | Dev5 | 8h |
| 131 | 1.2.2.4.10 | Perform UT & Fix bugs | 1d | 2012-09-18 08:00 | 2012-09-18 17:00 | 130 | 11.88d |  | start no earlier than 2012-09-18 08:00 | Dev5 | 8h |

| ID | WBS | Task | Duration | Start | Finish | Predecessors | Total slack | Free slack | Constraint | Resources | Work |
| --- | --- | --- | --- | --- | --- | --- | --- | --- | --- | --- | --- |
| 132 | 1.2.2.5 | **Create Treeview (cont)** | 9d | 2012-09-06 08:00 | 2012-09-18 17:00 |  | 11.88d |  |  | Dev4 | 144h |
| 133 | 1.2.2.5.1 | Study requirement | 0.5d | 2012-09-06 08:00 | 2012-09-06 12:00 | 86 | 11.88d | 0d |  | Dev4 | 4h |
| 134 | 1.2.2.5.2 | Prepare GUI prototypes | 0.5d | 2012-09-06 13:00 | 2012-09-06 17:00 | 133 | 11.88d | 0d |  | Dev4 | 4h |
| 135 | 1.2.2.5.3 | Study design & prepare pseudo codes | 0.75d | 2012-09-07 08:00 | 2012-09-07 15:00 | 134 | 11.88d | 0d |  | Dev4 | 6h |
| 136 | 1.2.2.5.4 | Prepare UT case document | 0.25d | 2012-09-07 15:00 | 2012-09-07 17:00 | 135 | 11.88d | 0d |  | Dev4 | 2h |
| 137 | 1.2.2.5.5 | Fill data on Treeview | 3d | 2012-09-10 08:00 | 2012-09-12 17:00 | 136 | 11.88d | 0d |  | Dev4 | 24h |
| 138 | 1.2.2.5.6 | Self code review & Fix bugs | 0.5d | 2012-09-13 08:00 | 2012-09-13 12:00 | 137 | 11.88d | 0d |  | Dev4 | 4h |
| 139 | 1.2.2.5.7 | Peer code review & Fix bugs | 0.5d | 2012-09-13 13:00 | 2012-09-13 17:00 | 138 | 11.88d | 0d |  | Dev4 | 4h |
| 140 | 1.2.2.5.8 | Update UT case document | 1d | 2012-09-14 08:00 | 2012-09-14 17:00 | 139 | 11.88d | 0d |  | Dev4 | 8h |
| 141 | 1.2.2.5.9 | Prepare UT scripts | 1d | 2012-09-17 08:00 | 2012-09-17 17:00 | 140 | 11.88d | 0d |  | Dev4 | 8h |
| 142 | 1.2.2.5.10 | Perform UT & Fix bugs | 1d | 2012-09-18 08:00 | 2012-09-18 17:00 | 141 | 11.88d |  |  | Dev4 | 8h |
| 143 | 1.2.2.6 | **Create Listview (cont)** | 9d | 2012-09-06 08:00 | 2012-09-18 17:00 |  | 11.88d |  |  | Dev6 | 144h |
| 144 | 1.2.2.6.1 | Study requirement | 0.5d | 2012-09-06 08:00 | 2012-09-06 12:00 | 86 | 11.88d | 0d |  | Dev6 | 4h |
| 145 | 1.2.2.6.2 | Prepare GUI prototypes | 0.5d | 2012-09-06 13:00 | 2012-09-06 17:00 | 144 | 11.88d | 0d |  | Dev6 | 4h |
| 146 | 1.2.2.6.3 | Study design & prepare pseudo codes | 0.75d | 2012-09-07 08:00 | 2012-09-07 15:00 | 145 | 11.88d | 0d |  | Dev6 | 6h |
| 147 | 1.2.2.6.4 | Prepare UT case document | 0.25d | 2012-09-07 15:00 | 2012-09-07 17:00 | 146 | 11.88d | 0d |  | Dev6 | 2h |
| 148 | 1.2.2.6.5 | Fill data on Listview | 3d | 2012-09-10 08:00 | 2012-09-12 17:00 | 147 | 11.88d | 0d |  | Dev6 | 24h |
| 149 | 1.2.2.6.6 | Self code review & Fix bugs | 0.5d | 2012-09-13 08:00 | 2012-09-13 12:00 | 148 | 11.88d | 0d |  | Dev6 | 4h |
| 150 | 1.2.2.6.7 | Peer code review & Fix bugs | 0.5d | 2012-09-13 13:00 | 2012-09-13 17:00 | 149 | 11.88d | 0d |  | Dev6 | 4h |
| 151 | 1.2.2.6.8 | Update UT case document | 1d | 2012-09-14 08:00 | 2012-09-14 17:00 | 150 | 11.88d | 0d |  | Dev6 | 8h |
| 152 | 1.2.2.6.9 | Prepare UT scripts | 1d | 2012-09-17 08:00 | 2012-09-17 17:00 | 151 | 11.88d | 0d |  | Dev6 | 8h |
| 153 | 1.2.2.6.10 | Perform UT & Fix bugs | 1d | 2012-09-18 08:00 | 2012-09-18 17:00 | 152 | 11.88d |  |  | Dev6 | 8h |
| 154 | 1.2.2.7 | **Create Delete function** | 9d | 2012-09-06 08:00 | 2012-09-18 17:00 |  | 0d |  |  | Dev7 | 144h |
| 155 | 1.2.2.7.1 | Study requirement | 0.5d | 2012-09-06 08:00 | 2012-09-06 12:00 | 86 | 0d |  | start no earlier than 2011-09-21 08:00 | Dev7 | 4h |
| 156 | 1.2.2.7.2 | Prepare GUI prototypes | 0.5d | 2012-09-06 13:00 | 2012-09-06 17:00 | 155 | 0d |  | start no earlier than 2011-09-21 13:00 | Dev7 | 4h |
| 157 | 1.2.2.7.3 | Study design & prepare pseudo codes | 0.75d | 2012-09-07 08:00 | 2012-09-07 15:00 | 156 | 0d |  | start no earlier than 2011-09-22 08:00 | Dev7 | 6h |
| 158 | 1.2.2.7.4 | Prepare UT case document | 0.25d | 2012-09-07 15:00 | 2012-09-07 17:00 | 157 | 0d |  | start no earlier than 2011-09-22 15:00 | Dev7 | 2h |
| 159 | 1.2.2.7.5 | Code delete function | 3d | 2012-09-10 08:00 | 2012-09-12 17:00 | 158 | 0d |  | start no earlier than 2011-09-23 08:00 | Dev7 | 24h |
| 160 | 1.2.2.7.6 | Self code review & Fix bugs | 0.5d | 2012-09-13 08:00 | 2012-09-13 12:00 | 159 | 0d |  | start no earlier than 2011-09-26 08:00 | Dev7 | 4h |
| 161 | 1.2.2.7.7 | Peer code review & Fix bugs | 0.5d | 2012-09-13 13:00 | 2012-09-13 17:00 | 160 | 0d |  | start no earlier than 2011-09-26 13:00 | Dev7 | 4h |
| 162 | 1.2.2.7.8 | Update UT case document | 1d | 2012-09-14 08:00 | 2012-09-14 17:00 | 161 | 0d |  | start no earlier than 2011-09-27 08:00 | Dev7 | 8h |
| 163 | 1.2.2.7.9 | Prepare UT scripts | 1d | 2012-09-17 08:00 | 2012-09-17 17:00 | 162 | 0d |  | start no earlier than 2011-09-27 13:00 | Dev7 | 8h |
| 164 | 1.2.2.7.10 | Perform UT & Fix bugs | 1d | 2012-09-18 08:00 | 2012-09-18 17:00 | 163 | 0d |  | start no earlier than 2011-09-28 08:00 | Dev7 | 8h |
| 165 | 1.2.2.8 | Milestone 2 | 1d | 2012-09-19 08:00 | 2012-09-19 17:00 | 164 | 0d |  |  | Dev7 | 8h |

| ID | WBS | Task | Duration | Start | Finish | Predecessors | Total slack | Free slack | Resources | Work |
| --- | --- | --- | --- | --- | --- | --- | --- | --- | --- | --- |
| 166 | 1.2.3 | **Iteration 3 (TBD)** | 10d | 2012-09-20 08:00 | 2012-10-03 17:00 | 165 | 0d |  |  | 880h |
| 167 | 1.2.3.1 | **Create form to copy and move files** | 9d | 2012-09-20 08:00 | 2012-10-02 17:00 |  | 1.88d |  | Dev1 | 144h |
| 168 | 1.2.3.1.1 | Study requirement | 0.5d | 2012-09-20 08:00 | 2012-09-20 12:00 | 165 | 1.88d | 0d | Dev1 | 4h |
| 169 | 1.2.3.1.2 | Prepare GUI prototypes | 0.5d | 2012-09-20 13:00 | 2012-09-20 17:00 | 168 | 1.88d | 0d | Dev1 | 4h |
| 170 | 1.2.3.1.3 | Study design & prepare pseudo codes | 0.75d | 2012-09-21 08:00 | 2012-09-21 15:00 | 169 | 1.88d | 0d | Dev1 | 6h |
| 171 | 1.2.3.1.4 | Prepare UT case document | 0.25d | 2012-09-21 15:00 | 2012-09-21 17:00 | 170 | 1.88d | 0d | Dev1 | 2h |
| 172 | 1.2.3.1.5 | Create form to copy and move files | 3d | 2012-09-24 08:00 | 2012-09-26 17:00 | 171 | 1.88d | 0d | Dev1 | 24h |
| 173 | 1.2.3.1.6 | Self code review & Fix bugs | 0.5d | 2012-09-27 08:00 | 2012-09-27 12:00 | 172 | 1.88d | 0d | Dev1 | 4h |
| 174 | 1.2.3.1.7 | Peer code review & Fix bugs | 0.5d | 2012-09-27 13:00 | 2012-09-27 17:00 | 173 | 1.88d | 0d | Dev1 | 4h |
| 175 | 1.2.3.1.8 | Update UT case document | 1d | 2012-09-28 08:00 | 2012-09-28 17:00 | 174 | 1.88d | 0d | Dev1 | 8h |
| 176 | 1.2.3.1.9 | Prepare UT scripts | 1d | 2012-10-01 08:00 | 2012-10-01 17:00 | 175 | 1.88d | 0d | Dev1 | 8h |
| 177 | 1.2.3.1.10 | Perform UT & Fix bugs | 1d | 2012-10-02 08:00 | 2012-10-02 17:00 | 176 | 1.88d |  | Dev1 | 8h |
| 178 | 1.2.3.2 | **Create drag and drop function** | 9d | 2012-09-20 08:00 | 2012-10-02 17:00 |  | 1.88d |  | Dev2 | 144h |
| 179 | 1.2.3.2.1 | Study requirement | 0.5d | 2012-09-20 08:00 | 2012-09-20 12:00 | 165 | 1.88d | 0d | Dev2 | 4h |
| 180 | 1.2.3.2.2 | Prepare GUI prototypes | 0.5d | 2012-09-20 13:00 | 2012-09-20 17:00 | 179 | 1.88d | 0d | Dev2 | 4h |
| 181 | 1.2.3.2.3 | Study design & prepare pseudo codes | 0.75d | 2012-09-21 08:00 | 2012-09-21 15:00 | 180 | 1.88d | 0d | Dev2 | 6h |
| 182 | 1.2.3.2.4 | Prepare UT case document | 0.25d | 2012-09-21 15:00 | 2012-09-21 17:00 | 181 | 1.88d | 0d | Dev2 | 2h |
| 183 | 1.2.3.2.5 | Create drag function | 1.5d | 2012-09-24 08:00 | 2012-09-25 12:00 | 182 | 1.88d | 0d | Dev2 | 12h |
| 184 | 1.2.3.2.6 | Create drop function | 1.5d | 2012-09-25 13:00 | 2012-09-26 17:00 | 183 | 1.88d | 0d | Dev2 | 12h |
| 185 | 1.2.3.2.7 | Self code review & Fix bugs | 0.5d | 2012-09-27 08:00 | 2012-09-27 12:00 | 184 | 1.88d | 0d | Dev2 | 4h |
| 186 | 1.2.3.2.8 | Peer code review & Fix bugs | 0.5d | 2012-09-27 13:00 | 2012-09-27 17:00 | 185 | 1.88d | 0d | Dev2 | 4h |
| 187 | 1.2.3.2.9 | Update UT case document | 1d | 2012-09-28 08:00 | 2012-09-28 17:00 | 186 | 1.88d | 0d | Dev2 | 8h |
| 188 | 1.2.3.2.10 | Prepare UT scripts | 1d | 2012-10-01 08:00 | 2012-10-01 17:00 | 187 | 1.88d | 0d | Dev2 | 8h |
| 189 | 1.2.3.2.11 | Perform UT & Fix bugs | 1d | 2012-10-02 08:00 | 2012-10-02 17:00 | 188 | 1.88d |  | Dev2 | 8h |

| ID | WBS | Task | Duration | Start | Finish | Predecessors | Total slack | Free slack | Resources | Work |
| --- | --- | --- | --- | --- | --- | --- | --- | --- | --- | --- |
| 190 | 1.2.3.3 | **View file's properties** | 9d | 2012-09-20 08:00 | 2012-10-02 17:00 |  | 1.88d |  | Dev3 | 144h |
| 191 | 1.2.3.3.1 | Study requirement | 0.5d | 2012-09-20 08:00 | 2012-09-20 12:00 | 165 | 1.88d | 0d | Dev3 | 4h |
| 192 | 1.2.3.3.2 | Prepare GUI prototypes | 0.5d | 2012-09-20 13:00 | 2012-09-20 17:00 | 191 | 1.88d | 0d | Dev3 | 4h |
| 193 | 1.2.3.3.3 | Study design & prepare pseudo codes | 0.75d | 2012-09-21 08:00 | 2012-09-21 15:00 | 192 | 1.88d | 0d | Dev3 | 6h |
| 194 | 1.2.3.3.4 | Prepare UT case document | 0.25d | 2012-09-21 15:00 | 2012-09-21 17:00 | 193 | 1.88d | 0d | Dev3 | 2h |
| 195 | 1.2.3.3.5 | Create form to display file's properties | 3d | 2012-09-24 08:00 | 2012-09-26 17:00 | 194 | 1.88d | 0d | Dev3 | 24h |
| 196 | 1.2.3.3.6 | Self code review & Fix bugs | 0.5d | 2012-09-27 08:00 | 2012-09-27 12:00 | 195 | 1.88d | 0d | Dev3 | 4h |
| 197 | 1.2.3.3.7 | Peer code review & Fix bugs | 0.5d | 2012-09-27 13:00 | 2012-09-27 17:00 | 196 | 1.88d | 0d | Dev3 | 4h |
| 198 | 1.2.3.3.8 | Update UT case document | 1d | 2012-09-28 08:00 | 2012-09-28 17:00 | 197 | 1.88d | 0d | Dev3 | 8h |
| 199 | 1.2.3.3.9 | Prepare UT scripts | 1d | 2012-10-01 08:00 | 2012-10-01 17:00 | 198 | 1.88d | 0d | Dev3 | 8h |
| 200 | 1.2.3.3.10 | Perform UT & Fix bugs | 1d | 2012-10-02 08:00 | 2012-10-02 17:00 | 199 | 1.88d |  | Dev3 | 8h |
| 201 | 1.2.3.4 | **Create Back and Forward function** | 9d | 2012-09-20 08:00 | 2012-10-02 17:00 |  | 1.88d |  | Dev5 | 144h |
| 202 | 1.2.3.4.1 | Study requirement | 0.5d | 2012-09-20 08:00 | 2012-09-20 12:00 | 165 | 1.88d | 0d | Dev5 | 4h |
| 203 | 1.2.3.4.2 | Prepare GUI prototypes | 0.5d | 2012-09-20 13:00 | 2012-09-20 17:00 | 202 | 1.88d | 0d | Dev5 | 4h |
| 204 | 1.2.3.4.3 | Study design & prepare pseudo codes | 0.75d | 2012-09-21 08:00 | 2012-09-21 15:00 | 203 | 1.88d | 0d | Dev5 | 6h |
| 205 | 1.2.3.4.4 | Prepare UT case document | 0.25d | 2012-09-21 15:00 | 2012-09-21 17:00 | 204 | 1.88d | 0d | Dev5 | 2h |
| 206 | 1.2.3.4.5 | Create Back function | 1.5d | 2012-09-24 08:00 | 2012-09-25 12:00 | 205 | 1.88d | 0d | Dev5 | 12h |
| 207 | 1.2.3.4.6 | Create forward function | 1.5d | 2012-09-25 13:00 | 2012-09-26 17:00 | 206 | 1.88d | 0d | Dev5 | 12h |
| 208 | 1.2.3.4.7 | Self code review & Fix bugs | 0.5d | 2012-09-27 08:00 | 2012-09-27 12:00 | 207 | 1.88d | 0d | Dev5 | 4h |
| 209 | 1.2.3.4.8 | Peer code review & Fix bugs | 0.5d | 2012-09-27 13:00 | 2012-09-27 17:00 | 208 | 1.88d | 0d | Dev5 | 4h |
| 210 | 1.2.3.4.9 | Update UT case document | 1d | 2012-09-28 08:00 | 2012-09-28 17:00 | 209 | 1.88d | 0d | Dev5 | 8h |
| 211 | 1.2.3.4.10 | Prepare UT scripts | 1d | 2012-10-01 08:00 | 2012-10-01 17:00 | 210 | 1.88d | 0d | Dev5 | 8h |
| 212 | 1.2.3.4.11 | Perform UT & Fix bugs | 1d | 2012-10-02 08:00 | 2012-10-02 17:00 | 211 | 1.88d |  | Dev5 | 8h |
| 213 | 1.2.3.5 | **Create double-click to open a file** | 9d | 2012-09-20 08:00 | 2012-10-02 17:00 |  | 1.88d |  | Dev7 | 144h |
| 214 | 1.2.3.5.1 | Study requirement | 0.5d | 2012-09-20 08:00 | 2012-09-20 12:00 | 165 | 1.88d | 0d | Dev7 | 4h |
| 215 | 1.2.3.5.2 | Prepare GUI prototypes | 0.5d | 2012-09-20 13:00 | 2012-09-20 17:00 | 214 | 1.88d | 0d | Dev7 | 4h |
| 216 | 1.2.3.5.3 | Study design & prepare pseudo codes | 0.75d | 2012-09-21 08:00 | 2012-09-21 15:00 | 215 | 1.88d | 0d | Dev7 | 6h |
| 217 | 1.2.3.5.4 | Prepare UT case document | 0.25d | 2012-09-21 15:00 | 2012-09-21 17:00 | 216 | 1.88d | 0d | Dev7 | 2h |
| 218 | 1.2.3.5.5 | Create double-click to open a file | 3d | 2012-09-24 08:00 | 2012-09-26 17:00 | 217 | 1.88d | 0d | Dev7 | 24h |
| 219 | 1.2.3.5.6 | Self code review & Fix bugs | 0.5d | 2012-09-27 08:00 | 2012-09-27 12:00 | 218 | 1.88d | 0d | Dev7 | 4h |
| 220 | 1.2.3.5.7 | Peer code review & Fix bugs | 0.5d | 2012-09-27 13:00 | 2012-09-27 17:00 | 219 | 1.88d | 0d | Dev7 | 4h |
| 221 | 1.2.3.5.8 | Update UT case document | 1d | 2012-09-28 08:00 | 2012-09-28 17:00 | 220 | 1.88d | 0d | Dev7 | 8h |
| 222 | 1.2.3.5.9 | Prepare UT scripts | 1d | 2012-10-01 08:00 | 2012-10-01 17:00 | 221 | 1.88d | 0d | Dev7 | 8h |
| 223 | 1.2.3.5.10 | Perform UT & Fix bugs | 1d | 2012-10-02 08:00 | 2012-10-02 17:00 | 222 | 1.88d |  | Dev7 | 8h |

| ID | WBS | Task | Duration | Start | Finish | Predecessors | Total slack | Resources | Work |
| --- | --- | --- | --- | --- | --- | --- | --- | --- | --- |
| 224 | 1.2.3.6 | **Create copy, cut, move function (use Hot-keys)** | 9d | 2012-09-20 08:00 | 2012-10-02 17:00 |  | 0d | Dev4 | 144h |
| 225 | 1.2.3.6.1 | Study requirement | 0.5d | 2012-09-20 08:00 | 2012-09-20 12:00 | 165 | 0d | Dev4 | 4h |
| 226 | 1.2.3.6.2 | Prepare GUI prototypes | 0.5d | 2012-09-20 13:00 | 2012-09-20 17:00 | 225 | 0d | Dev4 | 4h |
| 227 | 1.2.3.6.3 | Study design & prepare pseudo codes | 0.75d | 2012-09-21 08:00 | 2012-09-21 15:00 | 226 | 0d | Dev4 | 6h |
| 228 | 1.2.3.6.4 | Prepare UT case document | 0.25d | 2012-09-21 15:00 | 2012-09-21 17:00 | 227 | 0d | Dev4 | 2h |
| 229 | 1.2.3.6.5 | Create copy, move, … (use hot-keys) | 3d | 2012-09-24 08:00 | 2012-09-26 17:00 | 228 | 0d | Dev4 | 24h |
| 230 | 1.2.3.6.6 | Self code review & Fix bugs | 0.5d | 2012-09-27 08:00 | 2012-09-27 12:00 | 229 | 0d | Dev4 | 4h |
| 231 | 1.2.3.6.7 | Peer code review & Fix bugs | 0.5d | 2012-09-27 13:00 | 2012-09-27 17:00 | 230 | 0d | Dev4 | 4h |
| 232 | 1.2.3.6.8 | Update UT case document | 1d | 2012-09-28 08:00 | 2012-09-28 17:00 | 231 | 0d | Dev4 | 8h |
| 233 | 1.2.3.6.9 | Prepare UT scripts | 1d | 2012-10-01 08:00 | 2012-10-01 17:00 | 232 | 0d | Dev4 | 8h |
| 234 | 1.2.3.6.10 | Perform UT & Fix bugs | 1d | 2012-10-02 08:00 | 2012-10-02 17:00 | 233 | 0d | Dev4 | 8h |
| 235 | 1.2.3.7 | Milestone 3 | 1d | 2012-10-03 08:00 | 2012-10-03 17:00 | 234 | 0d | PM; DevTeam | 16h |
| 236 | 1.3 | **Termination** | 0.88d | 2012-10-04 08:00 | 2012-10-04 16:00 |  | 0d |  | 14h |
| 237 | 1.3.1 | Project Package, Evaluations | 0.75d | 2012-10-04 08:00 | 2012-10-04 15:00 | 235 | 0d | PM; DevTeam | 12h |
| 238 | 1.3.2 | Post-mortem Meeting | 0.12d | 2012-10-04 15:00 | 2012-10-04 16:00 | 237 | 0d | PM; DevTeam | 2h |
