# C&C++_ProjectSchedule_v0.1

Schedule from MS Project, 2012-01-18 to 2012-03-13.

## Calendars

- Standard: Mon-Fri 08:00-12:00, 13:00-17:00; Sat-Sun off.

## Resources

| Resource |
| --- |
| PM |
| DevTeam |
| Test1 |
| TungNS |
| HoatND |
| SonNN |
| KienTX |
| TuanVT |
| MinhNV |
| Dev7 |
| Dev8 |
| Dev9 |
| Dev10 |
| Dev11 |
| Dev12 |
| Dev13 |

## Schedule

| ID | WBS | Task | Duration | Start | Finish | Predecessors | Total slack | Free slack | Constraint | Resources | Work |
| --- | --- | --- | --- | --- | --- | --- | --- | --- | --- | --- | --- |
| 1 | 1 | **MOCK_C&C++** | 39.88d | 2012-01-18 08:00 | 2012-03-13 16:00 |  | 0d |  |  |  | 2452h |
| 2 | 1.1 | **Initiation** | 1d | 2012-01-18 08:00 | 2012-01-18 17:00 |  | 0d |  |  |  | 16h |
| 3 | 1.1.1 | Project kick-off & introduction | 0.25d | 2012-01-18 08:00 | 2012-01-18 10:00 |  | 0d |  | start no earlier than 2012-01-18 08:00 | PM; DevTeam | 4h |
| 4 | 1.1.2 | Preparation & Study overview requirements | 0.5d | 2012-01-18 10:00 | 2012-01-18 15:00 | 3 | 0d |  |  | PM; DevTeam | 8h |
| 5 | 1.1.3 | Requirement brainstorming | 0.25d | 2012-01-18 15:00 | 2012-01-18 17:00 | 4 | 0d |  |  | PM; DevTeam | 4h |
| 6 | 1.2 | **Definition & Solution** | 1d | 2012-01-19 08:00 | 2012-01-19 17:00 |  | 0d |  |  |  | 14h |
| 7 | 1.2.1 | Study overview designs | 0.5d | 2012-01-19 08:00 | 2012-01-19 12:00 | 5 | 0d |  |  | DevTeam; Test1 | 8h |
| 8 | 1.2.2 | Build up pseudo code scheletons | 0.25d | 2012-01-19 13:00 | 2012-01-19 15:00 | 7 | 0d |  |  | DevTeam | 2h |
| 9 | 1.2.3 | Brainstorming: design & conventions | 0.25d | 2012-01-19 15:00 | 2012-01-19 17:00 | 8 | 0d |  |  | PM; DevTeam | 4h |
| 10 | 1.3 | **Construction** | 37d | 2012-01-20 08:00 | 2012-03-12 17:00 |  | 0d |  |  |  | 2408h |
| 11 | 1.3.1 | **Iteration 1** | 13d | 2012-01-20 08:00 | 2012-02-07 17:00 |  | 0d |  |  |  | 928h |
| 12 | 1.3.1.1 | **Create CToolBarEx class** | 12d | 2012-01-20 08:00 | 2012-02-06 17:00 |  | 25.88d |  |  | TungNS | 152h |
| 13 | 1.3.1.1.1 | Study requirement | 0.5d | 2012-01-20 08:00 | 2012-01-20 12:00 | 9 | 25.88d | 0d |  | TungNS | 4h |
| 14 | 1.3.1.1.2 | Prepare GUI prototypes | 0.5d | 2012-01-20 13:00 | 2012-01-20 17:00 | 13 | 25.88d | 0d |  | TungNS | 4h |
| 15 | 1.3.1.1.3 | Study design & prepare pseudo codes | 0.75d | 2012-01-30 08:00 | 2012-01-30 15:00 | 14FS+5d | 25.88d | 0d |  | TungNS | 6h |
| 16 | 1.3.1.1.4 | Prepare UT case document | 0.25d | 2012-01-30 15:00 | 2012-01-30 17:00 | 15 | 25.88d | 0d |  | TungNS | 2h |
| 17 | 1.3.1.1.5 | Create Toolbar (CToolBarEx class) | 2d | 2012-01-31 08:00 | 2012-02-01 17:00 | 16 | 25.88d | 0d |  | TungNS | 16h |
| 18 | 1.3.1.1.6 | Self code review & Fix bugs | 0.5d | 2012-02-02 08:00 | 2012-02-02 12:00 | 17 | 25.88d | 0d |  | TungNS | 4h |
| 19 | 1.3.1.1.7 | Peer code review & Fix bugs | 0.5d | 2012-02-02 13:00 | 2012-02-02 17:00 | 18 | 25.88d | 0d |  | TungNS | 4h |
| 20 | 1.3.1.1.8 | Update UT case document | 0.5d | 2012-02-03 08:00 | 2012-02-03 12:00 | 19 | 25.88d | 0d |  | TungNS | 4h |
| 21 | 1.3.1.1.9 | Prepare UT scripts | 0.5d | 2012-02-03 13:00 | 2012-02-03 17:00 | 20 | 25.88d | 0d |  | TungNS | 4h |
| 22 | 1.3.1.1.10 | Perform UT & Fix bugs | 1d | 2012-02-06 08:00 | 2012-02-06 17:00 | 21 | 25.88d |  |  | TungNS | 8h |
| 23 | 1.3.1.2 | **Create CRulerEx class** | 12d | 2012-01-20 08:00 | 2012-02-06 17:00 |  | 25.88d |  |  | HoatND | 152h |
| 24 | 1.3.1.2.1 | Study requirement | 0.5d | 2012-01-20 08:00 | 2012-01-20 12:00 | 9 | 25.88d | 0d |  | HoatND | 4h |
| 25 | 1.3.1.2.2 | Prepare GUI prototypes | 0.5d | 2012-01-20 13:00 | 2012-01-20 17:00 | 24 | 25.88d | 0d |  | HoatND | 4h |
| 26 | 1.3.1.2.3 | Study design & prepare pseudo codes | 0.75d | 2012-01-30 08:00 | 2012-01-30 15:00 | 25FS+5d | 25.88d | 0d |  | HoatND | 6h |
| 27 | 1.3.1.2.4 | Prepare UT case document | 0.25d | 2012-01-30 15:00 | 2012-01-30 17:00 | 26 | 25.88d | 0d |  | HoatND | 2h |
| 28 | 1.3.1.2.5 | Create Ruler | 2d | 2012-01-31 08:00 | 2012-02-01 17:00 | 27 | 25.88d | 0d |  | HoatND | 16h |
| 29 | 1.3.1.2.6 | Self code review & Fix bugs | 0.5d | 2012-02-02 08:00 | 2012-02-02 12:00 | 28 | 25.88d | 0d |  | HoatND | 4h |
| 30 | 1.3.1.2.7 | Peer code review & Fix bugs | 0.5d | 2012-02-02 13:00 | 2012-02-02 17:00 | 29 | 25.88d | 0d |  | HoatND | 4h |
| 31 | 1.3.1.2.8 | Update UT case document | 0.5d | 2012-02-03 08:00 | 2012-02-03 12:00 | 30 | 25.88d | 0d |  | HoatND | 4h |
| 32 | 1.3.1.2.9 | Prepare UT scripts | 0.5d | 2012-02-03 13:00 | 2012-02-03 17:00 | 31 | 25.88d | 0d |  | HoatND | 4h |
| 33 | 1.3.1.2.10 | Perform UT & Fix bugs | 1d | 2012-02-06 08:00 | 2012-02-06 17:00 | 32 | 25.88d |  |  | HoatND | 8h |

| ID | WBS | Task | Duration | Start | Finish | Predecessors | Total slack | Free slack | Resources | Work |
| --- | --- | --- | --- | --- | --- | --- | --- | --- | --- | --- |
| 34 | 1.3.1.3 | **Create Pages to input characters** | 12d | 2012-01-20 08:00 | 2012-02-06 17:00 |  | 25.88d |  | SonNN | 152h |
| 35 | 1.3.1.3.1 | Study requirement | 0.5d | 2012-01-20 08:00 | 2012-01-20 12:00 | 9 | 25.88d | 0d | SonNN | 4h |
| 36 | 1.3.1.3.2 | Prepare GUI prototypes | 0.5d | 2012-01-20 13:00 | 2012-01-20 17:00 | 35 | 25.88d | 0d | SonNN | 4h |
| 37 | 1.3.1.3.3 | Study design & prepare pseudo codes | 0.75d | 2012-01-30 08:00 | 2012-01-30 15:00 | 36FS+5d | 25.88d | 0d | SonNN | 6h |
| 38 | 1.3.1.3.4 | Prepare UT case document | 0.25d | 2012-01-30 15:00 | 2012-01-30 17:00 | 37 | 25.88d | 0d | SonNN | 2h |
| 39 | 1.3.1.3.5 | Create scrollbar | 0.5d | 2012-01-31 08:00 | 2012-01-31 12:00 | 38 | 25.88d | 0d | SonNN | 4h |
| 40 | 1.3.1.3.6 | Create pages to input characters | 1.5d | 2012-01-31 13:00 | 2012-02-01 17:00 | 39 | 25.88d | 0d | SonNN | 12h |
| 41 | 1.3.1.3.7 | Self code review & Fix bugs | 0.5d | 2012-02-02 08:00 | 2012-02-02 12:00 | 40 | 25.88d | 0d | SonNN | 4h |
| 42 | 1.3.1.3.8 | Peer code review & Fix bugs | 0.5d | 2012-02-02 13:00 | 2012-02-02 17:00 | 41 | 25.88d | 0d | SonNN | 4h |
| 43 | 1.3.1.3.9 | Update UT case document | 0.5d | 2012-02-03 08:00 | 2012-02-03 12:00 | 42 | 25.88d | 0d | SonNN | 4h |
| 44 | 1.3.1.3.10 | Prepare UT scripts | 0.5d | 2012-02-03 13:00 | 2012-02-03 17:00 | 43 | 25.88d | 0d | SonNN | 4h |
| 45 | 1.3.1.3.11 | Perform UT & Fix bugs | 1d | 2012-02-06 08:00 | 2012-02-06 17:00 | 44 | 25.88d |  | SonNN | 8h |
| 46 | 1.3.1.4 | **Create Font, font size on Toolbar** | 12d | 2012-01-20 08:00 | 2012-02-06 17:00 |  | 25.88d |  | KienTX | 152h |
| 47 | 1.3.1.4.1 | Study requirement | 0.5d | 2012-01-20 08:00 | 2012-01-20 12:00 | 9 | 25.88d | 0d | KienTX | 4h |
| 48 | 1.3.1.4.2 | Prepare GUI prototypes | 0.5d | 2012-01-20 13:00 | 2012-01-20 17:00 | 47 | 25.88d | 0d | KienTX | 4h |
| 49 | 1.3.1.4.3 | Study design & prepare pseudo codes | 0.75d | 2012-01-30 08:00 | 2012-01-30 15:00 | 48FS+5d | 25.88d | 0d | KienTX | 6h |
| 50 | 1.3.1.4.4 | Prepare UT case document | 0.25d | 2012-01-30 15:00 | 2012-01-30 17:00 | 49 | 25.88d | 0d | KienTX | 2h |
| 51 | 1.3.1.4.5 | Create font & font size on toolbar | 2d | 2012-01-31 08:00 | 2012-02-01 17:00 | 50 | 25.88d | 0d | KienTX | 16h |
| 52 | 1.3.1.4.6 | Self code review & Fix bugs | 0.5d | 2012-02-02 08:00 | 2012-02-02 12:00 | 51 | 25.88d | 0d | KienTX | 4h |
| 53 | 1.3.1.4.7 | Peer code review & Fix bugs | 0.5d | 2012-02-02 13:00 | 2012-02-02 17:00 | 52 | 25.88d | 0d | KienTX | 4h |
| 54 | 1.3.1.4.8 | Update UT case document | 0.5d | 2012-02-03 08:00 | 2012-02-03 12:00 | 53 | 25.88d | 0d | KienTX | 4h |
| 55 | 1.3.1.4.9 | Prepare UT scripts | 0.5d | 2012-02-03 13:00 | 2012-02-03 17:00 | 54 | 25.88d | 0d | KienTX | 4h |
| 56 | 1.3.1.4.10 | Perform UT & Fix bugs | 1d | 2012-02-06 08:00 | 2012-02-06 17:00 | 55 | 25.88d |  | KienTX | 8h |
| 57 | 1.3.1.5 | **Create Menu & Status bar** | 12d | 2012-01-20 08:00 | 2012-02-06 17:00 |  | 25.88d |  | TuanVT | 152h |
| 58 | 1.3.1.5.1 | Study requirement | 0.5d | 2012-01-20 08:00 | 2012-01-20 12:00 | 9 | 25.88d | 0d | TuanVT | 4h |
| 59 | 1.3.1.5.2 | Prepare GUI prototypes | 0.5d | 2012-01-20 13:00 | 2012-01-20 17:00 | 58 | 25.88d | 0d | TuanVT | 4h |
| 60 | 1.3.1.5.3 | Study design & prepare pseudo codes | 0.75d | 2012-01-30 08:00 | 2012-01-30 15:00 | 59FS+5d | 25.88d | 0d | TuanVT | 6h |
| 61 | 1.3.1.5.4 | Prepare UT case document | 0.25d | 2012-01-30 15:00 | 2012-01-30 17:00 | 60 | 25.88d | 0d | TuanVT | 2h |
| 62 | 1.3.1.5.5 | Create menu & status bar | 2d | 2012-01-31 08:00 | 2012-02-01 17:00 | 61 | 25.88d | 0d | TuanVT | 16h |
| 63 | 1.3.1.5.6 | Self code review & Fix bugs | 0.5d | 2012-02-02 08:00 | 2012-02-02 12:00 | 62 | 25.88d | 0d | TuanVT | 4h |
| 64 | 1.3.1.5.7 | Peer code review & Fix bugs | 0.5d | 2012-02-02 13:00 | 2012-02-02 17:00 | 63 | 25.88d | 0d | TuanVT | 4h |
| 65 | 1.3.1.5.8 | Update UT case document | 0.5d | 2012-02-03 08:00 | 2012-02-03 12:00 | 64 | 25.88d | 0d | TuanVT | 4h |
| 66 | 1.3.1.5.9 | Prepare UT scripts | 0.5d | 2012-02-03 13:00 | 2012-02-03 17:00 | 65 | 25.88d | 0d | TuanVT | 4h |
| 67 | 1.3.1.5.10 | Perform UT & Fix bugs | 1d | 2012-02-06 08:00 | 2012-02-06 17:00 | 66 | 25.88d |  | TuanVT | 8h |

| ID | WBS | Task | Duration | Start | Finish | Predecessors | Total slack | Free slack | Resources | Work |
| --- | --- | --- | --- | --- | --- | --- | --- | --- | --- | --- |
| 68 | 1.3.1.6 | **Create options for program (font name, size & page margin)** | 12d | 2012-01-20 08:00 | 2012-02-06 17:00 |  | 0d |  | MinhNV | 152h |
| 69 | 1.3.1.6.1 | Study requirement | 0.5d | 2012-01-20 08:00 | 2012-01-20 12:00 | 9 | 0d |  | MinhNV | 4h |
| 70 | 1.3.1.6.2 | Prepare GUI prototypes | 0.5d | 2012-01-20 13:00 | 2012-01-20 17:00 | 69 | 0d |  | MinhNV | 4h |
| 71 | 1.3.1.6.3 | Study design & prepare pseudo codes | 0.75d | 2012-01-30 08:00 | 2012-01-30 15:00 | 70FS+5d | 0d |  | MinhNV | 6h |
| 72 | 1.3.1.6.4 | Prepare UT case document | 0.25d | 2012-01-30 15:00 | 2012-01-30 17:00 | 71 | 0d |  | MinhNV | 2h |
| 73 | 1.3.1.6.5 | Create options (Page margin, font name, font size) | 2d | 2012-01-31 08:00 | 2012-02-01 17:00 | 72 | 0d |  | MinhNV | 16h |
| 74 | 1.3.1.6.6 | Self code review & Fix bugs | 0.5d | 2012-02-02 08:00 | 2012-02-02 12:00 | 73 | 0d |  | MinhNV | 4h |
| 75 | 1.3.1.6.7 | Peer code review & Fix bugs | 0.5d | 2012-02-02 13:00 | 2012-02-02 17:00 | 74 | 0d |  | MinhNV | 4h |
| 76 | 1.3.1.6.8 | Update UT case document | 0.5d | 2012-02-03 08:00 | 2012-02-03 12:00 | 75 | 0d |  | MinhNV | 4h |
| 77 | 1.3.1.6.9 | Prepare UT scripts | 0.5d | 2012-02-03 13:00 | 2012-02-03 17:00 | 76 | 0d |  | MinhNV | 4h |
| 78 | 1.3.1.6.10 | Perform UT & Fix bugs | 1d | 2012-02-06 08:00 | 2012-02-06 17:00 | 77 | 0d |  | MinhNV | 8h |
| 79 | 1.3.1.7 | Milestone 1 | 1d | 2012-02-07 08:00 | 2012-02-07 17:00 | 78 | 0d |  | PM; DevTeam | 16h |
| 80 | 1.3.2 | **Iteration 2** | 8d | 2012-02-08 08:00 | 2012-02-17 17:00 |  | 0d |  |  | 672h |
| 81 | 1.3.2.1 | **Create input character function** | 7d | 2012-02-08 08:00 | 2012-02-16 17:00 |  | 17.88d |  | TungNS | 112h |
| 82 | 1.3.2.1.1 | Study requirement | 0.5d | 2012-02-08 08:00 | 2012-02-08 12:00 | 79 | 17.88d | 0d | TungNS | 4h |
| 83 | 1.3.2.1.2 | Prepare GUI prototypes | 0.5d | 2012-02-08 13:00 | 2012-02-08 17:00 | 82 | 17.88d | 0d | TungNS | 4h |
| 84 | 1.3.2.1.3 | Study design & prepare pseudo codes | 0.75d | 2012-02-09 08:00 | 2012-02-09 15:00 | 83 | 17.88d | 0d | TungNS | 6h |
| 85 | 1.3.2.1.4 | Prepare UT case document | 0.25d | 2012-02-09 15:00 | 2012-02-09 17:00 | 84 | 17.88d | 0d | TungNS | 2h |
| 86 | 1.3.2.1.5 | Create input character function | 2d | 2012-02-10 08:00 | 2012-02-13 17:00 | 85 | 17.88d | 0d | TungNS | 16h |
| 87 | 1.3.2.1.6 | Self code review & Fix bugs | 0.5d | 2012-02-14 08:00 | 2012-02-14 12:00 | 86 | 17.88d | 0d | TungNS | 4h |
| 88 | 1.3.2.1.7 | Peer code review & Fix bugs | 0.5d | 2012-02-14 13:00 | 2012-02-14 17:00 | 87 | 17.88d | 0d | TungNS | 4h |
| 89 | 1.3.2.1.8 | Update UT case document | 0.5d | 2012-02-15 08:00 | 2012-02-15 12:00 | 88 | 17.88d | 0d | TungNS | 4h |
| 90 | 1.3.2.1.9 | Prepare UT scripts | 0.5d | 2012-02-15 13:00 | 2012-02-15 17:00 | 89 | 17.88d | 0d | TungNS | 4h |
| 91 | 1.3.2.1.10 | Perform UT & Fix bugs | 1d | 2012-02-16 08:00 | 2012-02-16 17:00 | 90 | 17.88d |  | TungNS | 8h |

| ID | WBS | Task | Duration | Start | Finish | Predecessors | Total slack | Free slack | Resources | Work |
| --- | --- | --- | --- | --- | --- | --- | --- | --- | --- | --- |
| 92 | 1.3.2.2 | **Create format character function (I, U, B)** | 7d | 2012-02-08 08:00 | 2012-02-16 17:00 |  | 17.88d |  | HoatND | 112h |
| 93 | 1.3.2.2.1 | Study requirement | 0.5d | 2012-02-08 08:00 | 2012-02-08 12:00 | 79 | 17.88d | 0d | HoatND | 4h |
| 94 | 1.3.2.2.2 | Prepare GUI prototypes | 0.5d | 2012-02-08 13:00 | 2012-02-08 17:00 | 93 | 17.88d | 0d | HoatND | 4h |
| 95 | 1.3.2.2.3 | Study design & prepare pseudo codes | 0.75d | 2012-02-09 08:00 | 2012-02-09 15:00 | 94 | 17.88d | 0d | HoatND | 6h |
| 96 | 1.3.2.2.4 | Prepare UT case document | 0.25d | 2012-02-09 15:00 | 2012-02-09 17:00 | 95 | 17.88d | 0d | HoatND | 2h |
| 97 | 1.3.2.2.5 | Coding format character function | 2d | 2012-02-10 08:00 | 2012-02-13 17:00 | 96 | 17.88d | 0d | HoatND | 16h |
| 98 | 1.3.2.2.6 | Self code review & Fix bugs | 0.5d | 2012-02-14 08:00 | 2012-02-14 12:00 | 97 | 17.88d | 0d | HoatND | 4h |
| 99 | 1.3.2.2.7 | Peer code review & Fix bugs | 0.5d | 2012-02-14 13:00 | 2012-02-14 17:00 | 98 | 17.88d | 0d | HoatND | 4h |
| 100 | 1.3.2.2.8 | Update UT case document | 0.5d | 2012-02-15 08:00 | 2012-02-15 12:00 | 99 | 17.88d | 0d | HoatND | 4h |
| 101 | 1.3.2.2.9 | Prepare UT scripts | 0.5d | 2012-02-15 13:00 | 2012-02-15 17:00 | 100 | 17.88d | 0d | HoatND | 4h |
| 102 | 1.3.2.2.10 | Perform UT & Fix bugs | 1d | 2012-02-16 08:00 | 2012-02-16 17:00 | 101 | 17.88d |  | HoatND | 8h |
| 103 | 1.3.2.3 | **Create save document to file** | 7d | 2012-02-08 08:00 | 2012-02-16 17:00 |  | 17.88d |  | SonNN | 112h |
| 104 | 1.3.2.3.1 | Study requirement | 0.5d | 2012-02-08 08:00 | 2012-02-08 12:00 | 79 | 17.88d | 0d | SonNN | 4h |
| 105 | 1.3.2.3.2 | Prepare GUI prototypes | 0.5d | 2012-02-08 13:00 | 2012-02-08 17:00 | 104 | 17.88d | 0d | SonNN | 4h |
| 106 | 1.3.2.3.3 | Study design & prepare pseudo codes | 0.75d | 2012-02-09 08:00 | 2012-02-09 15:00 | 105 | 17.88d | 0d | SonNN | 6h |
| 107 | 1.3.2.3.4 | Prepare UT case document | 0.25d | 2012-02-09 15:00 | 2012-02-09 17:00 | 106 | 17.88d | 0d | SonNN | 2h |
| 108 | 1.3.2.3.5 | Coding save file | 2d | 2012-02-10 08:00 | 2012-02-13 17:00 | 107 | 17.88d | 0d | SonNN | 16h |
| 109 | 1.3.2.3.6 | Self code review & Fix bugs | 0.5d | 2012-02-14 08:00 | 2012-02-14 12:00 | 108 | 17.88d | 0d | SonNN | 4h |
| 110 | 1.3.2.3.7 | Peer code review & Fix bugs | 0.5d | 2012-02-14 13:00 | 2012-02-14 17:00 | 109 | 17.88d | 0d | SonNN | 4h |
| 111 | 1.3.2.3.8 | Update UT case document | 0.5d | 2012-02-15 08:00 | 2012-02-15 12:00 | 110 | 17.88d | 0d | SonNN | 4h |
| 112 | 1.3.2.3.9 | Prepare UT scripts | 0.5d | 2012-02-15 13:00 | 2012-02-15 17:00 | 111 | 17.88d | 0d | SonNN | 4h |
| 113 | 1.3.2.3.10 | Perform UT & Fix bugs | 1d | 2012-02-16 08:00 | 2012-02-16 17:00 | 112 | 17.88d |  | SonNN | 8h |
| 114 | 1.3.2.4 | **Create open document from file** | 7d | 2012-02-08 08:00 | 2012-02-16 17:00 |  | 17.88d |  | KienTX | 112h |
| 115 | 1.3.2.4.1 | Study requirement | 0.5d | 2012-02-08 08:00 | 2012-02-08 12:00 | 79 | 17.88d | 0d | KienTX | 4h |
| 116 | 1.3.2.4.2 | Prepare GUI prototypes | 0.5d | 2012-02-08 13:00 | 2012-02-08 17:00 | 115 | 17.88d | 0d | KienTX | 4h |
| 117 | 1.3.2.4.3 | Study design & prepare pseudo codes | 0.75d | 2012-02-09 08:00 | 2012-02-09 15:00 | 116 | 17.88d | 0d | KienTX | 6h |
| 118 | 1.3.2.4.4 | Prepare UT case document | 0.25d | 2012-02-09 15:00 | 2012-02-09 17:00 | 117 | 17.88d | 0d | KienTX | 2h |
| 119 | 1.3.2.4.5 | Coding open file | 2d | 2012-02-10 08:00 | 2012-02-13 17:00 | 118 | 17.88d | 0d | KienTX | 16h |
| 120 | 1.3.2.4.6 | Self code review & Fix bugs | 0.5d | 2012-02-14 08:00 | 2012-02-14 12:00 | 119 | 17.88d | 0d | KienTX | 4h |
| 121 | 1.3.2.4.7 | Peer code review & Fix bugs | 0.5d | 2012-02-14 13:00 | 2012-02-14 17:00 | 120 | 17.88d | 0d | KienTX | 4h |
| 122 | 1.3.2.4.8 | Update UT case document | 0.5d | 2012-02-15 08:00 | 2012-02-15 12:00 | 121 | 17.88d | 0d | KienTX | 4h |
| 123 | 1.3.2.4.9 | Prepare UT scripts | 0.5d | 2012-02-15 13:00 | 2012-02-15 17:00 | 122 | 17.88d | 0d | KienTX | 4h |
| 124 | 1.3.2.4.10 | Perform UT & Fix bugs | 1d | 2012-02-16 08:00 | 2012-02-16 17:00 | 123 | 17.88d |  | KienTX | 8h |

| ID | WBS | Task | Duration | Start | Finish | Predecessors | Total slack | Free slack | Resources | Work |
| --- | --- | --- | --- | --- | --- | --- | --- | --- | --- | --- |
| 125 | 1.3.2.5 | **Create print preview** | 7d | 2012-02-08 08:00 | 2012-02-16 17:00 |  | 17.88d |  | TuanVT | 112h |
| 126 | 1.3.2.5.1 | Study requirement | 0.5d | 2012-02-08 08:00 | 2012-02-08 12:00 | 79 | 17.88d | 0d | TuanVT | 4h |
| 127 | 1.3.2.5.2 | Prepare GUI prototypes | 0.5d | 2012-02-08 13:00 | 2012-02-08 17:00 | 126 | 17.88d | 0d | TuanVT | 4h |
| 128 | 1.3.2.5.3 | Study design & prepare pseudo codes | 0.75d | 2012-02-09 08:00 | 2012-02-09 15:00 | 127 | 17.88d | 0d | TuanVT | 6h |
| 129 | 1.3.2.5.4 | Prepare UT case document | 0.25d | 2012-02-09 15:00 | 2012-02-09 17:00 | 128 | 17.88d | 0d | TuanVT | 2h |
| 130 | 1.3.2.5.5 | Coding print preview function | 2d | 2012-02-10 08:00 | 2012-02-13 17:00 | 129 | 17.88d | 0d | TuanVT | 16h |
| 131 | 1.3.2.5.6 | Self code review & Fix bugs | 0.5d | 2012-02-14 08:00 | 2012-02-14 12:00 | 130 | 17.88d | 0d | TuanVT | 4h |
| 132 | 1.3.2.5.7 | Peer code review & Fix bugs | 0.5d | 2012-02-14 13:00 | 2012-02-14 17:00 | 131 | 17.88d | 0d | TuanVT | 4h |
| 133 | 1.3.2.5.8 | Update UT case document | 0.5d | 2012-02-15 08:00 | 2012-02-15 12:00 | 132 | 17.88d | 0d | TuanVT | 4h |
| 134 | 1.3.2.5.9 | Prepare UT scripts | 0.5d | 2012-02-15 13:00 | 2012-02-15 17:00 | 133 | 17.88d | 0d | TuanVT | 4h |
| 135 | 1.3.2.5.10 | Perform UT & Fix bugs | 1d | 2012-02-16 08:00 | 2012-02-16 17:00 | 134 | 17.88d |  | TuanVT | 8h |
| 136 | 1.3.2.6 | **Create print function** | 7d | 2012-02-08 08:00 | 2012-02-16 17:00 |  | 0d |  | MinhNV | 112h |
| 137 | 1.3.2.6.1 | Study requirement | 0.5d | 2012-02-08 08:00 | 2012-02-08 12:00 | 79 | 0d |  | MinhNV | 4h |
| 138 | 1.3.2.6.2 | Prepare GUI prototypes | 0.5d | 2012-02-08 13:00 | 2012-02-08 17:00 | 137 | 0d |  | MinhNV | 4h |
| 139 | 1.3.2.6.3 | Study design & prepare pseudo codes | 0.75d | 2012-02-09 08:00 | 2012-02-09 15:00 | 138 | 0d |  | MinhNV | 6h |
| 140 | 1.3.2.6.4 | Prepare UT case document | 0.25d | 2012-02-09 15:00 | 2012-02-09 17:00 | 139 | 0d |  | MinhNV | 2h |
| 141 | 1.3.2.6.5 | Coding print function | 2d | 2012-02-10 08:00 | 2012-02-13 17:00 | 140 | 0d |  | MinhNV | 16h |
| 142 | 1.3.2.6.6 | Self code review & Fix bugs | 0.5d | 2012-02-14 08:00 | 2012-02-14 12:00 | 141 | 0d |  | MinhNV | 4h |
| 143 | 1.3.2.6.7 | Peer code review & Fix bugs | 0.5d | 2012-02-14 13:00 | 2012-02-14 17:00 | 142 | 0d |  | MinhNV | 4h |
| 144 | 1.3.2.6.8 | Update UT case document | 0.5d | 2012-02-15 08:00 | 2012-02-15 12:00 | 143 | 0d |  | MinhNV | 4h |
| 145 | 1.3.2.6.9 | Prepare UT scripts | 0.5d | 2012-02-15 13:00 | 2012-02-15 17:00 | 144 | 0d |  | MinhNV | 4h |
| 146 | 1.3.2.6.10 | Perform UT & Fix bugs | 1d | 2012-02-16 08:00 | 2012-02-16 17:00 | 145 | 0d |  | MinhNV | 8h |
| 147 | 1.3.2.7 | Milestone 2 | 1d | 2012-02-17 08:00 | 2012-02-17 17:00 | 146 | 0d |  |  |  |
| 148 | 1.3.3 | **Iteration 3** | 8d | 2012-02-20 08:00 | 2012-02-29 17:00 |  | 0d |  |  | 688h |
| 149 | 1.3.3.1 | **Create format character function (Change font & size)** | 7d | 2012-02-20 08:00 | 2012-02-28 17:00 |  | 9.88d |  | TungNS | 112h |
| 150 | 1.3.3.1.1 | Study requirement | 0.5d | 2012-02-20 08:00 | 2012-02-20 12:00 | 147 | 9.88d | 0d | TungNS | 4h |
| 151 | 1.3.3.1.2 | Prepare GUI prototypes | 0.5d | 2012-02-20 13:00 | 2012-02-20 17:00 | 150 | 9.88d | 0d | TungNS | 4h |
| 152 | 1.3.3.1.3 | Study design & prepare pseudo codes | 0.75d | 2012-02-21 08:00 | 2012-02-21 15:00 | 151 | 9.88d | 0d | TungNS | 6h |
| 153 | 1.3.3.1.4 | Prepare UT case document | 0.25d | 2012-02-21 15:00 | 2012-02-21 17:00 | 152 | 9.88d | 0d | TungNS | 2h |
| 154 | 1.3.3.1.5 | Coding for change font (name & size) | 2d | 2012-02-22 08:00 | 2012-02-23 17:00 | 153 | 9.88d | 0d | TungNS | 16h |
| 155 | 1.3.3.1.6 | Self code review & Fix bugs | 0.5d | 2012-02-24 08:00 | 2012-02-24 12:00 | 154 | 9.88d | 0d | TungNS | 4h |
| 156 | 1.3.3.1.7 | Peer code review & Fix bugs | 0.5d | 2012-02-24 13:00 | 2012-02-24 17:00 | 155 | 9.88d | 0d | TungNS | 4h |
| 157 | 1.3.3.1.8 | Update UT case document | 0.5d | 2012-02-27 08:00 | 2012-02-27 12:00 | 156 | 9.88d | 0d | TungNS | 4h |
| 158 | 1.3.3.1.9 | Prepare UT scripts | 0.5d | 2012-02-27 13:00 | 2012-02-27 17:00 | 157 | 9.88d | 0d | TungNS | 4h |
| 159 | 1.3.3.1.10 | Perform UT & Fix bugs | 1d | 2012-02-28 08:00 | 2012-02-28 17:00 | 158 | 9.88d |  | TungNS | 8h |

| ID | WBS | Task | Duration | Start | Finish | Predecessors | Total slack | Free slack | Resources | Work |
| --- | --- | --- | --- | --- | --- | --- | --- | --- | --- | --- |
| 160 | 1.3.3.2 | **Create search function** | 7d | 2012-02-20 08:00 | 2012-02-28 17:00 |  | 9.88d |  | HoatND | 112h |
| 161 | 1.3.3.2.1 | Study requirement | 0.5d | 2012-02-20 08:00 | 2012-02-20 12:00 | 147 | 9.88d | 0d | HoatND | 4h |
| 162 | 1.3.3.2.2 | Prepare GUI prototypes | 0.5d | 2012-02-20 13:00 | 2012-02-20 17:00 | 161 | 9.88d | 0d | HoatND | 4h |
| 163 | 1.3.3.2.3 | Study design & prepare pseudo codes | 0.75d | 2012-02-21 08:00 | 2012-02-21 15:00 | 162 | 9.88d | 0d | HoatND | 6h |
| 164 | 1.3.3.2.4 | Prepare UT case document | 0.25d | 2012-02-21 15:00 | 2012-02-21 17:00 | 163 | 9.88d | 0d | HoatND | 2h |
| 165 | 1.3.3.2.5 | Coding search function | 2d | 2012-02-22 08:00 | 2012-02-23 17:00 | 164 | 9.88d | 0d | HoatND | 16h |
| 166 | 1.3.3.2.6 | Self code review & Fix bugs | 0.5d | 2012-02-24 08:00 | 2012-02-24 12:00 | 165 | 9.88d | 0d | HoatND | 4h |
| 167 | 1.3.3.2.7 | Peer code review & Fix bugs | 0.5d | 2012-02-24 13:00 | 2012-02-24 17:00 | 166 | 9.88d | 0d | HoatND | 4h |
| 168 | 1.3.3.2.8 | Update UT case document | 0.5d | 2012-02-27 08:00 | 2012-02-27 12:00 | 167 | 9.88d | 0d | HoatND | 4h |
| 169 | 1.3.3.2.9 | Prepare UT scripts | 0.5d | 2012-02-27 13:00 | 2012-02-27 17:00 | 168 | 9.88d | 0d | HoatND | 4h |
| 170 | 1.3.3.2.10 | Perform UT & Fix bugs | 1d | 2012-02-28 08:00 | 2012-02-28 17:00 | 169 | 9.88d |  | HoatND | 8h |
| 171 | 1.3.3.3 | **Create new, copy & paste function** | 7d | 2012-02-20 08:00 | 2012-02-28 17:00 |  | 9.88d |  | SonNN | 112h |
| 172 | 1.3.3.3.1 | Study requirement | 0.5d | 2012-02-20 08:00 | 2012-02-20 12:00 | 147 | 9.88d | 0d | SonNN | 4h |
| 173 | 1.3.3.3.2 | Prepare GUI prototypes | 0.5d | 2012-02-20 13:00 | 2012-02-20 17:00 | 172 | 9.88d | 0d | SonNN | 4h |
| 174 | 1.3.3.3.3 | Study design & prepare pseudo codes | 0.75d | 2012-02-21 08:00 | 2012-02-21 15:00 | 173 | 9.88d | 0d | SonNN | 6h |
| 175 | 1.3.3.3.4 | Prepare UT case document | 0.25d | 2012-02-21 15:00 | 2012-02-21 17:00 | 174 | 9.88d | 0d | SonNN | 2h |
| 176 | 1.3.3.3.5 | Create new, copy & paste function | 2d | 2012-02-22 08:00 | 2012-02-23 17:00 | 175 | 9.88d | 0d | SonNN | 16h |
| 177 | 1.3.3.3.6 | Self code review & Fix bugs | 0.5d | 2012-02-24 08:00 | 2012-02-24 12:00 | 176 | 9.88d | 0d | SonNN | 4h |
| 178 | 1.3.3.3.7 | Peer code review & Fix bugs | 0.5d | 2012-02-24 13:00 | 2012-02-24 17:00 | 177 | 9.88d | 0d | SonNN | 4h |
| 179 | 1.3.3.3.8 | Update UT case document | 0.5d | 2012-02-27 08:00 | 2012-02-27 12:00 | 178 | 9.88d | 0d | SonNN | 4h |
| 180 | 1.3.3.3.9 | Prepare UT scripts | 0.5d | 2012-02-27 13:00 | 2012-02-27 17:00 | 179 | 9.88d | 0d | SonNN | 4h |
| 181 | 1.3.3.3.10 | Perform UT & Fix bugs | 1d | 2012-02-28 08:00 | 2012-02-28 17:00 | 180 | 9.88d |  | SonNN | 8h |
| 182 | 1.3.3.4 | **Create Indent function** | 7d | 2012-02-20 08:00 | 2012-02-28 17:00 |  | 9.88d |  | KienTX | 112h |
| 183 | 1.3.3.4.1 | Study requirement | 0.5d | 2012-02-20 08:00 | 2012-02-20 12:00 | 147 | 9.88d | 0d | KienTX | 4h |
| 184 | 1.3.3.4.2 | Prepare GUI prototypes | 0.5d | 2012-02-20 13:00 | 2012-02-20 17:00 | 183 | 9.88d | 0d | KienTX | 4h |
| 185 | 1.3.3.4.3 | Study design & prepare pseudo codes | 0.75d | 2012-02-21 08:00 | 2012-02-21 15:00 | 184 | 9.88d | 0d | KienTX | 6h |
| 186 | 1.3.3.4.4 | Prepare UT case document | 0.25d | 2012-02-21 15:00 | 2012-02-21 17:00 | 185 | 9.88d | 0d | KienTX | 2h |
| 187 | 1.3.3.4.5 | Coding indent fucntion | 2d | 2012-02-22 08:00 | 2012-02-23 17:00 | 186 | 9.88d | 0d | KienTX | 16h |
| 188 | 1.3.3.4.6 | Self code review & Fix bugs | 0.5d | 2012-02-24 08:00 | 2012-02-24 12:00 | 187 | 9.88d | 0d | KienTX | 4h |
| 189 | 1.3.3.4.7 | Peer code review & Fix bugs | 0.5d | 2012-02-24 13:00 | 2012-02-24 17:00 | 188 | 9.88d | 0d | KienTX | 4h |
| 190 | 1.3.3.4.8 | Update UT case document | 0.5d | 2012-02-27 08:00 | 2012-02-27 12:00 | 189 | 9.88d | 0d | KienTX | 4h |
| 191 | 1.3.3.4.9 | Prepare UT scripts | 0.5d | 2012-02-27 13:00 | 2012-02-27 17:00 | 190 | 9.88d | 0d | KienTX | 4h |
| 192 | 1.3.3.4.10 | Perform UT & Fix bugs | 1d | 2012-02-28 08:00 | 2012-02-28 17:00 | 191 | 9.88d |  | KienTX | 8h |

| ID | WBS | Task | Duration | Start | Finish | Predecessors | Total slack | Free slack | Resources | Work |
| --- | --- | --- | --- | --- | --- | --- | --- | --- | --- | --- |
| 193 | 1.3.3.5 | **Create Undo & Redo function** | 7d | 2012-02-20 08:00 | 2012-02-28 17:00 |  | 9.88d |  | TuanVT | 112h |
| 194 | 1.3.3.5.1 | Study requirement | 0.5d | 2012-02-20 08:00 | 2012-02-20 12:00 | 147 | 9.88d | 0d | TuanVT | 4h |
| 195 | 1.3.3.5.2 | Prepare GUI prototypes | 0.5d | 2012-02-20 13:00 | 2012-02-20 17:00 | 194 | 9.88d | 0d | TuanVT | 4h |
| 196 | 1.3.3.5.3 | Study design & prepare pseudo codes | 0.75d | 2012-02-21 08:00 | 2012-02-21 15:00 | 195 | 9.88d | 0d | TuanVT | 6h |
| 197 | 1.3.3.5.4 | Prepare UT case document | 0.25d | 2012-02-21 15:00 | 2012-02-21 17:00 | 196 | 9.88d | 0d | TuanVT | 2h |
| 198 | 1.3.3.5.5 | Create Undo function | 1d | 2012-02-22 08:00 | 2012-02-22 17:00 | 197 | 9.88d | 0d | TuanVT | 8h |
| 199 | 1.3.3.5.6 | Create Redo function | 1d | 2012-02-23 08:00 | 2012-02-23 17:00 | 198 | 9.88d | 0d | TuanVT | 8h |
| 200 | 1.3.3.5.7 | Self code review & Fix bugs | 0.5d | 2012-02-24 08:00 | 2012-02-24 12:00 | 199 | 9.88d | 0d | TuanVT | 4h |
| 201 | 1.3.3.5.8 | Peer code review & Fix bugs | 0.5d | 2012-02-24 13:00 | 2012-02-24 17:00 | 200 | 9.88d | 0d | TuanVT | 4h |
| 202 | 1.3.3.5.9 | Update UT case document | 0.5d | 2012-02-27 08:00 | 2012-02-27 12:00 | 201 | 9.88d | 0d | TuanVT | 4h |
| 203 | 1.3.3.5.10 | Prepare UT scripts | 0.5d | 2012-02-27 13:00 | 2012-02-27 17:00 | 202 | 9.88d | 0d | TuanVT | 4h |
| 204 | 1.3.3.5.11 | Perform UT & Fix bugs | 1d | 2012-02-28 08:00 | 2012-02-28 17:00 | 203 | 9.88d |  | TuanVT | 8h |
| 205 | 1.3.3.6 | **Create Replace function** | 7d | 2012-02-20 08:00 | 2012-02-28 17:00 |  | 0d |  | MinhNV | 112h |
| 206 | 1.3.3.6.1 | Study requirement | 0.5d | 2012-02-20 08:00 | 2012-02-20 12:00 | 147 | 0d |  | MinhNV | 4h |
| 207 | 1.3.3.6.2 | Prepare GUI prototypes | 0.5d | 2012-02-20 13:00 | 2012-02-20 17:00 | 206 | 0d |  | MinhNV | 4h |
| 208 | 1.3.3.6.3 | Study design & prepare pseudo codes | 0.75d | 2012-02-21 08:00 | 2012-02-21 15:00 | 207 | 0d |  | MinhNV | 6h |
| 209 | 1.3.3.6.4 | Prepare UT case document | 0.25d | 2012-02-21 15:00 | 2012-02-21 17:00 | 208 | 0d |  | MinhNV | 2h |
| 210 | 1.3.3.6.5 | Create replace function | 2d | 2012-02-22 08:00 | 2012-02-23 17:00 | 209 | 0d |  | MinhNV | 16h |
| 211 | 1.3.3.6.6 | Self code review & Fix bugs | 0.5d | 2012-02-24 08:00 | 2012-02-24 12:00 | 210 | 0d |  | MinhNV | 4h |
| 212 | 1.3.3.6.7 | Peer code review & Fix bugs | 0.5d | 2012-02-24 13:00 | 2012-02-24 17:00 | 211 | 0d |  | MinhNV | 4h |
| 213 | 1.3.3.6.8 | Update UT case document | 0.5d | 2012-02-27 08:00 | 2012-02-27 12:00 | 212 | 0d |  | MinhNV | 4h |
| 214 | 1.3.3.6.9 | Prepare UT scripts | 0.5d | 2012-02-27 13:00 | 2012-02-27 17:00 | 213 | 0d |  | MinhNV | 4h |
| 215 | 1.3.3.6.10 | Perform UT & Fix bugs | 1d | 2012-02-28 08:00 | 2012-02-28 17:00 | 214 | 0d |  | MinhNV | 8h |
| 216 | 1.3.3.7 | Milestone 3 | 1d | 2012-02-29 08:00 | 2012-02-29 17:00 | 215 | 0d |  | PM; DevTeam | 16h |

| ID | WBS | Task | Duration | Start | Finish | Predecessors | Total slack | Resources | Work |
| --- | --- | --- | --- | --- | --- | --- | --- | --- | --- |
| 217 | 1.3.4 | **Iteration 4** | 8d | 2012-03-01 08:00 | 2012-03-12 17:00 |  | 0d |  | 120h |
| 218 | 1.3.4.1 | **Create Print & Preview function** | 7d | 2012-03-01 08:00 | 2012-03-09 17:00 |  | 0d | TungNS | 112h |
| 219 | 1.3.4.1.1 | Study requirement | 0.5d | 2012-03-01 08:00 | 2012-03-01 12:00 | 216 | 0d | TungNS | 4h |
| 220 | 1.3.4.1.2 | Prepare GUI prototypes | 0.5d | 2012-03-01 13:00 | 2012-03-01 17:00 | 219 | 0d | TungNS | 4h |
| 221 | 1.3.4.1.3 | Study design & prepare pseudo codes | 0.75d | 2012-03-02 08:00 | 2012-03-02 15:00 | 220 | 0d | TungNS | 6h |
| 222 | 1.3.4.1.4 | Prepare UT case document | 0.25d | 2012-03-02 15:00 | 2012-03-02 17:00 | 221 | 0d | TungNS | 2h |
| 223 | 1.3.4.1.5 | Create Print function | 1d | 2012-03-05 08:00 | 2012-03-05 17:00 | 222 | 0d | TungNS | 8h |
| 224 | 1.3.4.1.6 | Create Preview function | 1d | 2012-03-06 08:00 | 2012-03-06 17:00 | 223 | 0d | TungNS | 8h |
| 225 | 1.3.4.1.7 | Self code review & Fix bugs | 0.5d | 2012-03-07 08:00 | 2012-03-07 12:00 | 224 | 0d | TungNS | 4h |
| 226 | 1.3.4.1.8 | Peer code review & Fix bugs | 0.5d | 2012-03-07 13:00 | 2012-03-07 17:00 | 225 | 0d | TungNS | 4h |
| 227 | 1.3.4.1.9 | Update UT case document | 0.5d | 2012-03-08 08:00 | 2012-03-08 12:00 | 226 | 0d | TungNS | 4h |
| 228 | 1.3.4.1.10 | Prepare UT scripts | 0.5d | 2012-03-08 13:00 | 2012-03-08 17:00 | 227 | 0d | TungNS | 4h |
| 229 | 1.3.4.1.11 | Perform UT & Fix bugs | 1d | 2012-03-09 08:00 | 2012-03-09 17:00 | 228 | 0d | TungNS | 8h |
| 230 | 1.3.4.2 | Milestone 4 | 1d | 2012-03-12 08:00 | 2012-03-12 17:00 | 229 | 0d | Dev8 | 8h |
| 231 | 1.4 | **Termination** | 0.88d | 2012-03-13 08:00 | 2012-03-13 16:00 |  | 0d |  | 14h |
| 232 | 1.4.1 | Project Package, Evaluations | 0.75d | 2012-03-13 08:00 | 2012-03-13 15:00 | 230 | 0d | PM; DevTeam | 12h |
| 233 | 1.4.2 | Post-mortem Meeting | 0.12d | 2012-03-13 15:00 | 2012-03-13 16:00 | 232 | 0d | PM; DevTeam | 2h |
