Schedule from MS Project, 2013-07-01 to 2013-07-31.

## Calendars

- Standard: Mon-Fri 08:00-12:00, 13:00-17:00; Sat-Sun off.

## Resources

| Resource |
| --- |
| Team |
| Dev1 |
| Dev2 |
| Dev3 |
| Dev4 |
| Dev5 |
| Dev6 |
| Dev7 |

## Schedule

| ID | WBS | Task | Duration | Start | Finish | Predecessors | Total slack | Resources | Work |
| --- | --- | --- | --- | --- | --- | --- | --- | --- | --- |
| 1 | 1 | **Project-Code** | 23d | 2013-07-01 08:00 | 2013-07-31 17:00 |  | 0d |  | 904h |
| 2 | 1.1 | **Preparation** | 1d | 2013-07-01 08:00 | 2013-07-01 17:00 |  | 0d |  | 8h |
| 3 | 1.1.1 | Kick off project | 0.5d | 2013-07-01 08:00 | 2013-07-01 12:00 |  | 0d | Team | 4h |
| 4 | 1.1.2 | Prepare environment | 0.5d | 2013-07-01 13:00 | 2013-07-01 17:00 | 3 | 0d | Team | 4h |
| 5 | 1.2 | **Project Iteration 1** | 11d | 2013-07-02 08:00 | 2013-07-16 17:00 | 2 | 0d |  | 448h |
| 6 | 1.2.1 | **UC13.1 - E_Guide administration** | 11d | 2013-07-02 08:00 | 2013-07-16 17:00 |  | 0d | Dev1 | 88h |
| 7 | 1.2.1.1 | **Requirement Analyzing** | 1.5d | 2013-07-02 08:00 | 2013-07-03 12:00 |  | 0d |  |  |
| 8 | 1.2.1.1.1 | Study requirement | 0.4d | 2013-07-02 08:00 | 2013-07-02 11:12 |  | 0d |  |  |
| 9 | 1.2.1.1.2 | Prepare requirement specification | 0.6d | 2013-07-02 11:12 | 2013-07-02 17:00 | 8 | 0d |  |  |
| 10 | 1.2.1.1.3 | Review requirement specification | 0.5d | 2013-07-03 08:00 | 2013-07-03 12:00 | 9 | 0d |  |  |
| 11 | 1.2.1.2 | **Detail Design** | 1.5d | 2013-07-03 13:00 | 2013-07-04 17:00 |  | 0d |  |  |
| 12 | 1.2.1.2.1 | Study input design document | 0.4d | 2013-07-03 13:00 | 2013-07-03 16:12 | 10 | 0d |  |  |
| 13 | 1.2.1.2.2 | Prepare design specification | 0.6d | 2013-07-03 16:12 | 2013-07-04 12:00 | 12 | 0d |  |  |
| 14 | 1.2.1.2.3 | Review design specification | 0.5d | 2013-07-04 13:00 | 2013-07-04 17:00 | 13 | 0d |  |  |
| 15 | 1.2.1.3 | **UT Cases Preparing** | 1.5d | 2013-07-05 08:00 | 2013-07-08 12:00 |  | 0d |  |  |
| 16 | 1.2.1.3.1 | Prepare UT cases document | 1d | 2013-07-05 08:00 | 2013-07-05 17:00 | 14 | 0d |  |  |
| 17 | 1.2.1.3.2 | Review UT cases document round 1 | 0.5d | 2013-07-08 08:00 | 2013-07-08 12:00 | 16 | 0d |  |  |
| 18 | 1.2.1.4 | **Coding** | 3d | 2013-07-08 13:00 | 2013-07-11 12:00 |  | 0d |  |  |
| 19 | 1.2.1.4.1 | Code (output: draft version) | 1d | 2013-07-08 13:00 | 2013-07-09 12:00 | 17 | 0d |  |  |
| 20 | 1.2.1.4.2 | Review codes round 1 | 0.5d | 2013-07-09 13:00 | 2013-07-09 17:00 | 19 | 0d |  |  |
| 21 | 1.2.1.4.3 | Complete code | 0.5d | 2013-07-10 08:00 | 2013-07-10 12:00 | 20 | 0d |  |  |
| 22 | 1.2.1.4.4 | Self review & Fix bugs | 0.5d | 2013-07-10 13:00 | 2013-07-10 17:00 | 21 | 0d |  |  |
| 23 | 1.2.1.4.5 | Review codes round 2 | 0.5d | 2013-07-11 08:00 | 2013-07-11 12:00 | 22 | 0d |  |  |
| 24 | 1.2.1.5 | **Update UT Cases** | 1d | 2013-07-11 13:00 | 2013-07-12 12:00 |  | 0d |  |  |
| 25 | 1.2.1.5.1 | Update UT cases document | 0.5d | 2013-07-11 13:00 | 2013-07-11 17:00 | 23 | 0d |  |  |
| 26 | 1.2.1.5.2 | Review UT cases document round 2 | 0.5d | 2013-07-12 08:00 | 2013-07-12 12:00 | 25 | 0d |  |  |

Notes:
- 10: Eval1
- 14: Eval2
- 23: Eval3
- 26: Eval4

| ID | WBS | Task | Duration | Start | Finish | Predecessors | Total slack | Resources | Work |
| --- | --- | --- | --- | --- | --- | --- | --- | --- | --- |
| 27 | 1.2.1.6 | **Manual UT Execution** | 1d | 2013-07-12 13:00 | 2013-07-15 12:00 |  | 0d |  |  |
| 28 | 1.2.1.6.1 | Execute UT manually & Fix bugs | 0.5d | 2013-07-12 13:00 | 2013-07-12 17:00 | 26 | 0d |  |  |
| 29 | 1.2.1.6.2 | Review UT execution results round 1 | 0.5d | 2013-07-15 08:00 | 2013-07-15 12:00 | 28 | 0d |  |  |
| 30 | 1.2.1.7 | **Automated UT Execution** | 1.5d | 2013-07-15 13:00 | 2013-07-16 17:00 |  | 0d |  |  |
| 31 | 1.2.1.7.1 | Prepare UT scripts | 0.5d | 2013-07-15 13:00 | 2013-07-15 17:00 | 29 | 0d |  |  |
| 32 | 1.2.1.7.2 | Execute UT automatedly, Tuning scripts, update codes | 0.5d | 2013-07-16 08:00 | 2013-07-16 12:00 | 31 | 0d |  |  |
| 33 | 1.2.1.7.3 | Review UT scripts | 0.5d | 2013-07-16 13:00 | 2013-07-16 17:00 | 32 | 0d |  |  |
| 34 | 1.2.2 | **UC13.2 - E_News administration** | 11d | 2013-07-02 08:00 | 2013-07-16 17:00 |  | 0d | Dev2 | 88h |
| 35 | 1.2.2.1 | **Requirement Analyzing** | 1.5d | 2013-07-02 08:00 | 2013-07-03 12:00 |  | 0d |  |  |
| 36 | 1.2.2.1.1 | Study requirement | 0.4d | 2013-07-02 08:00 | 2013-07-02 11:12 |  | 0d |  |  |
| 37 | 1.2.2.1.2 | Prepare requirement specification | 0.6d | 2013-07-02 11:12 | 2013-07-02 17:00 | 36 | 0d |  |  |
| 38 | 1.2.2.1.3 | Review requirement specification | 0.5d | 2013-07-03 08:00 | 2013-07-03 12:00 | 37 | 0d |  |  |
| 39 | 1.2.2.2 | **Detail Design** | 1.5d | 2013-07-03 13:00 | 2013-07-04 17:00 |  | 0d |  |  |
| 40 | 1.2.2.2.1 | Study input design document | 0.4d | 2013-07-03 13:00 | 2013-07-03 16:12 | 38 | 0d |  |  |
| 41 | 1.2.2.2.2 | Prepare design specification | 0.6d | 2013-07-03 16:12 | 2013-07-04 12:00 | 40 | 0d |  |  |
| 42 | 1.2.2.2.3 | Review design specification | 0.5d | 2013-07-04 13:00 | 2013-07-04 17:00 | 41 | 0d |  |  |
| 43 | 1.2.2.3 | **UT Cases Preparing** | 1.5d | 2013-07-05 08:00 | 2013-07-08 12:00 |  | 0d |  |  |
| 44 | 1.2.2.3.1 | Prepare UT cases document | 1d | 2013-07-05 08:00 | 2013-07-05 17:00 | 42 | 0d |  |  |
| 45 | 1.2.2.3.2 | Review UT cases document round 1 | 0.5d | 2013-07-08 08:00 | 2013-07-08 12:00 | 44 | 0d |  |  |
| 46 | 1.2.2.4 | **Coding** | 3d | 2013-07-08 13:00 | 2013-07-11 12:00 |  | 0d |  |  |
| 47 | 1.2.2.4.1 | Code (output: draft version) | 1d | 2013-07-08 13:00 | 2013-07-09 12:00 | 45 | 0d |  |  |
| 48 | 1.2.2.4.2 | Review codes round 1 | 0.5d | 2013-07-09 13:00 | 2013-07-09 17:00 | 47 | 0d |  |  |
| 49 | 1.2.2.4.3 | Complete code | 0.5d | 2013-07-10 08:00 | 2013-07-10 12:00 | 48 | 0d |  |  |
| 50 | 1.2.2.4.4 | Self review & Fix bugs | 0.5d | 2013-07-10 13:00 | 2013-07-10 17:00 | 49 | 0d |  |  |
| 51 | 1.2.2.4.5 | Review codes round 2 | 0.5d | 2013-07-11 08:00 | 2013-07-11 12:00 | 50 | 0d |  |  |

Notes:
- 29: Eval5
- 38: Eval1
- 42: Eval2
- 51: Eval3

| ID | WBS | Task | Duration | Start | Finish | Predecessors | Total slack | Resources | Work |
| --- | --- | --- | --- | --- | --- | --- | --- | --- | --- |
| 52 | 1.2.2.5 | **Update UT Cases** | 1d | 2013-07-11 13:00 | 2013-07-12 12:00 |  | 0d |  |  |
| 53 | 1.2.2.5.1 | Update UT cases document | 0.5d | 2013-07-11 13:00 | 2013-07-11 17:00 | 51 | 0d |  |  |
| 54 | 1.2.2.5.2 | Review UT cases document round 2 | 0.5d | 2013-07-12 08:00 | 2013-07-12 12:00 | 53 | 0d |  |  |
| 55 | 1.2.2.6 | **Manual UT Execution** | 1d | 2013-07-12 13:00 | 2013-07-15 12:00 |  | 0d |  |  |
| 56 | 1.2.2.6.1 | Execute UT manually & Fix bugs | 0.5d | 2013-07-12 13:00 | 2013-07-12 17:00 | 54 | 0d |  |  |
| 57 | 1.2.2.6.2 | Review UT execution results round 1 | 0.5d | 2013-07-15 08:00 | 2013-07-15 12:00 | 56 | 0d |  |  |
| 58 | 1.2.2.7 | **Automated UT Execution** | 1.5d | 2013-07-15 13:00 | 2013-07-16 17:00 |  | 0d |  |  |
| 59 | 1.2.2.7.1 | Prepare UT scripts | 0.5d | 2013-07-15 13:00 | 2013-07-15 17:00 | 57 | 0d |  |  |
| 60 | 1.2.2.7.2 | Execute UT automatedly, Tuning scripts, update codes | 0.5d | 2013-07-16 08:00 | 2013-07-16 12:00 | 59 | 0d |  |  |
| 61 | 1.2.2.7.3 | Review UT scripts | 0.5d | 2013-07-16 13:00 | 2013-07-16 17:00 | 60 | 0d |  |  |
| 62 | 1.2.3 | **UC13.3 - Announcement Administration** | 11d | 2013-07-02 08:00 | 2013-07-16 17:00 |  | 0d | Dev3 | 88h |
| 63 | 1.2.3.1 | **Requirement Analyzing** | 1.5d | 2013-07-02 08:00 | 2013-07-03 12:00 |  | 0d |  |  |
| 64 | 1.2.3.1.1 | Study requirement | 0.4d | 2013-07-02 08:00 | 2013-07-02 11:12 |  | 0d |  |  |
| 65 | 1.2.3.1.2 | Prepare requirement specification | 0.6d | 2013-07-02 11:12 | 2013-07-02 17:00 | 64 | 0d |  |  |
| 66 | 1.2.3.1.3 | Review requirement specification | 0.5d | 2013-07-03 08:00 | 2013-07-03 12:00 | 65 | 0d |  |  |
| 67 | 1.2.3.2 | **Detail Design** | 1.5d | 2013-07-03 13:00 | 2013-07-04 17:00 |  | 0d |  |  |
| 68 | 1.2.3.2.1 | Study input design document | 0.4d | 2013-07-03 13:00 | 2013-07-03 16:12 | 66 | 0d |  |  |
| 69 | 1.2.3.2.2 | Prepare design specification | 0.6d | 2013-07-03 16:12 | 2013-07-04 12:00 | 68 | 0d |  |  |
| 70 | 1.2.3.2.3 | Review design specification | 0.5d | 2013-07-04 13:00 | 2013-07-04 17:00 | 69 | 0d |  |  |
| 71 | 1.2.3.3 | **UT Cases Preparing** | 1.5d | 2013-07-05 08:00 | 2013-07-08 12:00 |  | 0d |  |  |
| 72 | 1.2.3.3.1 | Prepare UT cases document | 1d | 2013-07-05 08:00 | 2013-07-05 17:00 | 70 | 0d |  |  |
| 73 | 1.2.3.3.2 | Review UT cases document round 1 | 0.5d | 2013-07-08 08:00 | 2013-07-08 12:00 | 72 | 0d |  |  |
| 74 | 1.2.3.4 | **Coding** | 3d | 2013-07-08 13:00 | 2013-07-11 12:00 |  | 0d |  |  |
| 75 | 1.2.3.4.1 | Code (output: draft version) | 1d | 2013-07-08 13:00 | 2013-07-09 12:00 | 73 | 0d |  |  |
| 76 | 1.2.3.4.2 | Review codes round 1 | 0.5d | 2013-07-09 13:00 | 2013-07-09 17:00 | 75 | 0d |  |  |
| 77 | 1.2.3.4.3 | Complete code | 0.5d | 2013-07-10 08:00 | 2013-07-10 12:00 | 76 | 0d |  |  |
| 78 | 1.2.3.4.4 | Self review & Fix bugs | 0.5d | 2013-07-10 13:00 | 2013-07-10 17:00 | 77 | 0d |  |  |
| 79 | 1.2.3.4.5 | Review codes round 2 | 0.5d | 2013-07-11 08:00 | 2013-07-11 12:00 | 78 | 0d |  |  |

Notes:
- 54: Eval4
- 57: Eval5
- 66: Eval1
- 70: Eval2
- 79: Eval3

| ID | WBS | Task | Duration | Start | Finish | Predecessors | Total slack | Resources | Work |
| --- | --- | --- | --- | --- | --- | --- | --- | --- | --- |
| 80 | 1.2.3.5 | **Update UT Cases** | 1d | 2013-07-11 13:00 | 2013-07-12 12:00 |  | 0d |  |  |
| 81 | 1.2.3.5.1 | Update UT cases document | 0.5d | 2013-07-11 13:00 | 2013-07-11 17:00 | 79 | 0d |  |  |
| 82 | 1.2.3.5.2 | Review UT cases document round 2 | 0.5d | 2013-07-12 08:00 | 2013-07-12 12:00 | 81 | 0d |  |  |
| 83 | 1.2.3.6 | **Manual UT Execution** | 1d | 2013-07-12 13:00 | 2013-07-15 12:00 |  | 0d |  |  |
| 84 | 1.2.3.6.1 | Execute UT manually & Fix bugs | 0.5d | 2013-07-12 13:00 | 2013-07-12 17:00 | 82 | 0d |  |  |
| 85 | 1.2.3.6.2 | Review UT execution results round 1 | 0.5d | 2013-07-15 08:00 | 2013-07-15 12:00 | 84 | 0d |  |  |
| 86 | 1.2.3.7 | **Automated UT Execution** | 1.5d | 2013-07-15 13:00 | 2013-07-16 17:00 |  | 0d |  |  |
| 87 | 1.2.3.7.1 | Prepare UT scripts | 0.5d | 2013-07-15 13:00 | 2013-07-15 17:00 | 85 | 0d |  |  |
| 88 | 1.2.3.7.2 | Execute UT automatedly, Tuning scripts, update codes | 0.5d | 2013-07-16 08:00 | 2013-07-16 12:00 | 87 | 0d |  |  |
| 89 | 1.2.3.7.3 | Review UT scripts | 0.5d | 2013-07-16 13:00 | 2013-07-16 17:00 | 88 | 0d |  |  |
| 90 | 1.2.4 | **UC13.4 - GST forms (Add new, Update, Delete)** | 11d | 2013-07-02 08:00 | 2013-07-16 17:00 |  | 0d | Dev4 | 88h |
| 91 | 1.2.4.1 | **Requirement Analyzing** | 1.5d | 2013-07-02 08:00 | 2013-07-03 12:00 |  | 0d |  |  |
| 92 | 1.2.4.1.1 | Study requirement | 0.4d | 2013-07-02 08:00 | 2013-07-02 11:12 |  | 0d |  |  |
| 93 | 1.2.4.1.2 | Prepare requirement specification | 0.6d | 2013-07-02 11:12 | 2013-07-02 17:00 | 92 | 0d |  |  |
| 94 | 1.2.4.1.3 | Review requirement specification | 0.5d | 2013-07-03 08:00 | 2013-07-03 12:00 | 93 | 0d |  |  |
| 95 | 1.2.4.2 | **Detail Design** | 1.5d | 2013-07-03 13:00 | 2013-07-04 17:00 |  | 0d |  |  |
| 96 | 1.2.4.2.1 | Study input design document | 0.4d | 2013-07-03 13:00 | 2013-07-03 16:12 | 94 | 0d |  |  |
| 97 | 1.2.4.2.2 | Prepare design specification | 0.6d | 2013-07-03 16:12 | 2013-07-04 12:00 | 96 | 0d |  |  |
| 98 | 1.2.4.2.3 | Review design specification | 0.5d | 2013-07-04 13:00 | 2013-07-04 17:00 | 97 | 0d |  |  |
| 99 | 1.2.4.3 | **UT Cases Preparing** | 1.5d | 2013-07-05 08:00 | 2013-07-08 12:00 |  | 0d |  |  |
| 100 | 1.2.4.3.1 | Prepare UT cases document | 1d | 2013-07-05 08:00 | 2013-07-05 17:00 | 98 | 0d |  |  |
| 101 | 1.2.4.3.2 | Review UT cases document round 1 | 0.5d | 2013-07-08 08:00 | 2013-07-08 12:00 | 100 | 0d |  |  |
| 102 | 1.2.4.4 | **Coding** | 3d | 2013-07-08 13:00 | 2013-07-11 12:00 |  | 0d |  |  |
| 103 | 1.2.4.4.1 | Code (output: draft version) | 1d | 2013-07-08 13:00 | 2013-07-09 12:00 | 101 | 0d |  |  |
| 104 | 1.2.4.4.2 | Review codes round 1 | 0.5d | 2013-07-09 13:00 | 2013-07-09 17:00 | 103 | 0d |  |  |
| 105 | 1.2.4.4.3 | Complete code | 0.5d | 2013-07-10 08:00 | 2013-07-10 12:00 | 104 | 0d |  |  |
| 106 | 1.2.4.4.4 | Self review & Fix bugs | 0.5d | 2013-07-10 13:00 | 2013-07-10 17:00 | 105 | 0d |  |  |
| 107 | 1.2.4.4.5 | Review codes round 2 | 0.5d | 2013-07-11 08:00 | 2013-07-11 12:00 | 106 | 0d |  |  |

Notes:
- 82: Eval4
- 85: Eval5
- 94: Eval1
- 98: Eval2
- 107: Eval3

| ID | WBS | Task | Duration | Start | Finish | Predecessors | Total slack | Resources | Work |
| --- | --- | --- | --- | --- | --- | --- | --- | --- | --- |
| 108 | 1.2.4.5 | **Update UT Cases** | 1d | 2013-07-11 13:00 | 2013-07-12 12:00 |  | 0d |  |  |
| 109 | 1.2.4.5.1 | Update UT cases document | 0.5d | 2013-07-11 13:00 | 2013-07-11 17:00 | 107 | 0d |  |  |
| 110 | 1.2.4.5.2 | Review UT cases document round 2 | 0.5d | 2013-07-12 08:00 | 2013-07-12 12:00 | 109 | 0d |  |  |
| 111 | 1.2.4.6 | **Manual UT Execution** | 1d | 2013-07-12 13:00 | 2013-07-15 12:00 |  | 0d |  |  |
| 112 | 1.2.4.6.1 | Execute UT manually & Fix bugs | 0.5d | 2013-07-12 13:00 | 2013-07-12 17:00 | 110 | 0d |  |  |
| 113 | 1.2.4.6.2 | Review UT execution results round 1 | 0.5d | 2013-07-15 08:00 | 2013-07-15 12:00 | 112 | 0d |  |  |
| 114 | 1.2.4.7 | **Automated UT Execution** | 1.5d | 2013-07-15 13:00 | 2013-07-16 17:00 |  | 0d |  |  |
| 115 | 1.2.4.7.1 | Prepare UT scripts | 0.5d | 2013-07-15 13:00 | 2013-07-15 17:00 | 113 | 0d |  |  |
| 116 | 1.2.4.7.2 | Execute UT automatedly, Tuning scripts, update codes | 0.5d | 2013-07-16 08:00 | 2013-07-16 12:00 | 115 | 0d |  |  |
| 117 | 1.2.4.7.3 | Review UT scripts | 0.5d | 2013-07-16 13:00 | 2013-07-16 17:00 | 116 | 0d |  |  |
| 118 | 1.2.5 | **UC13.4 - GST Templates (Add new, Update, Delete)** | 11d | 2013-07-02 08:00 | 2013-07-16 17:00 |  | 0d | Dev5 | 88h |
| 119 | 1.2.5.1 | **Requirement Analyzing** | 1.5d | 2013-07-02 08:00 | 2013-07-03 12:00 |  | 0d |  |  |
| 120 | 1.2.5.1.1 | Study requirement | 0.4d | 2013-07-02 08:00 | 2013-07-02 11:12 |  | 0d |  |  |
| 121 | 1.2.5.1.2 | Prepare requirement specification | 0.6d | 2013-07-02 11:12 | 2013-07-02 17:00 | 120 | 0d |  |  |
| 122 | 1.2.5.1.3 | Review requirement specification | 0.5d | 2013-07-03 08:00 | 2013-07-03 12:00 | 121 | 0d |  |  |
| 123 | 1.2.5.2 | **Detail Design** | 1.5d | 2013-07-03 13:00 | 2013-07-04 17:00 |  | 0d |  |  |
| 124 | 1.2.5.2.1 | Study input design document | 0.4d | 2013-07-03 13:00 | 2013-07-03 16:12 | 122 | 0d |  |  |
| 125 | 1.2.5.2.2 | Prepare design specification | 0.6d | 2013-07-03 16:12 | 2013-07-04 12:00 | 124 | 0d |  |  |
| 126 | 1.2.5.2.3 | Review design specification | 0.5d | 2013-07-04 13:00 | 2013-07-04 17:00 | 125 | 0d |  |  |
| 127 | 1.2.5.3 | **UT Cases Preparing** | 1.5d | 2013-07-05 08:00 | 2013-07-08 12:00 |  | 0d |  |  |
| 128 | 1.2.5.3.1 | Prepare UT cases document | 1d | 2013-07-05 08:00 | 2013-07-05 17:00 | 126 | 0d |  |  |
| 129 | 1.2.5.3.2 | Review UT cases document round 1 | 0.5d | 2013-07-08 08:00 | 2013-07-08 12:00 | 128 | 0d |  |  |
| 130 | 1.2.5.4 | **Coding** | 3d | 2013-07-08 13:00 | 2013-07-11 12:00 |  | 0d |  |  |
| 131 | 1.2.5.4.1 | Code (output: draft version) | 1d | 2013-07-08 13:00 | 2013-07-09 12:00 | 129 | 0d |  |  |
| 132 | 1.2.5.4.2 | Review codes round 1 | 0.5d | 2013-07-09 13:00 | 2013-07-09 17:00 | 131 | 0d |  |  |
| 133 | 1.2.5.4.3 | Complete code | 0.5d | 2013-07-10 08:00 | 2013-07-10 12:00 | 132 | 0d |  |  |
| 134 | 1.2.5.4.4 | Self review & Fix bugs | 0.5d | 2013-07-10 13:00 | 2013-07-10 17:00 | 133 | 0d |  |  |
| 135 | 1.2.5.4.5 | Review codes round 2 | 0.5d | 2013-07-11 08:00 | 2013-07-11 12:00 | 134 | 0d |  |  |

Notes:
- 110: Eval4
- 113: Eval5
- 122: Eval1
- 126: Eval2
- 135: Eval3

| ID | WBS | Task | Duration | Start | Finish | Predecessors | Total slack | Free slack | Resources | Work |
| --- | --- | --- | --- | --- | --- | --- | --- | --- | --- | --- |
| 136 | 1.2.5.5 | **Update UT Cases** | 1d | 2013-07-11 13:00 | 2013-07-12 12:00 |  | 0d |  |  |  |
| 137 | 1.2.5.5.1 | Update UT cases document | 0.5d | 2013-07-11 13:00 | 2013-07-11 17:00 | 135 | 0d |  |  |  |
| 138 | 1.2.5.5.2 | Review UT cases document round 2 | 0.5d | 2013-07-12 08:00 | 2013-07-12 12:00 | 137 | 0d |  |  |  |
| 139 | 1.2.5.6 | **Manual UT Execution** | 1d | 2013-07-12 13:00 | 2013-07-15 12:00 |  | 0d |  |  |  |
| 140 | 1.2.5.6.1 | Execute UT manually & Fix bugs | 0.5d | 2013-07-12 13:00 | 2013-07-12 17:00 | 138 | 0d |  |  |  |
| 141 | 1.2.5.6.2 | Review UT execution results round 1 | 0.5d | 2013-07-15 08:00 | 2013-07-15 12:00 | 140 | 0d |  |  |  |
| 142 | 1.2.5.7 | **Automated UT Execution** | 1.5d | 2013-07-15 13:00 | 2013-07-16 17:00 |  | 0d |  |  |  |
| 143 | 1.2.5.7.1 | Prepare UT scripts | 0.5d | 2013-07-15 13:00 | 2013-07-15 17:00 | 141 | 0d |  |  |  |
| 144 | 1.2.5.7.2 | Execute UT automatedly, Tuning scripts, update codes | 0.5d | 2013-07-16 08:00 | 2013-07-16 12:00 | 143 | 0d |  |  |  |
| 145 | 1.2.5.7.3 | Review UT scripts | 0.5d | 2013-07-16 13:00 | 2013-07-16 17:00 | 144 | 0d |  |  |  |
| 146 | 1.2.6 | **Evaluation** | 1d | 2013-07-02 08:00 | 2013-07-02 17:00 |  | 10d |  |  | 8h |
| 147 | 1.2.6.1 | Iteration result presentation | 0.7d | 2013-07-02 08:00 | 2013-07-02 14:36 |  | 10d | 0d | Team | 5.6h |
| 148 | 1.2.6.2 | Review & milestone review | 0.3d | 2013-07-02 14:36 | 2013-07-02 17:00 | 147 | 10d |  | Team | 2.4h |
| 149 | 1.3 | **Project Iteration 2** | 11d | 2013-07-17 08:00 | 2013-07-31 17:00 | 5 | 0d |  |  | 448h |
| 150 | 1.3.1 | **UC13.5 - FAQs (Add new, Update, Delete)** | 11d | 2013-07-17 08:00 | 2013-07-31 17:00 |  | 0d |  | Dev1 | 88h |
| 151 | 1.3.1.1 | **Requirement Analyzing** | 1.5d | 2013-07-17 08:00 | 2013-07-18 12:00 |  | 0d |  |  |  |
| 152 | 1.3.1.1.1 | Study requirement | 0.4d | 2013-07-17 08:00 | 2013-07-17 11:12 |  | 0d |  |  |  |
| 153 | 1.3.1.1.2 | Prepare requirement specification | 0.6d | 2013-07-17 11:12 | 2013-07-17 17:00 | 152 | 0d |  |  |  |
| 154 | 1.3.1.1.3 | Review requirement specification | 0.5d | 2013-07-18 08:00 | 2013-07-18 12:00 | 153 | 0d |  |  |  |
| 155 | 1.3.1.2 | **Detail Design** | 1.5d | 2013-07-18 13:00 | 2013-07-19 17:00 |  | 0d |  |  |  |
| 156 | 1.3.1.2.1 | Study input design document | 0.4d | 2013-07-18 13:00 | 2013-07-18 16:12 | 154 | 0d |  |  |  |
| 157 | 1.3.1.2.2 | Prepare design specification | 0.6d | 2013-07-18 16:12 | 2013-07-19 12:00 | 156 | 0d |  |  |  |
| 158 | 1.3.1.2.3 | Review design specification | 0.5d | 2013-07-19 13:00 | 2013-07-19 17:00 | 157 | 0d |  |  |  |
| 159 | 1.3.1.3 | **UT Cases Preparing** | 1.5d | 2013-07-22 08:00 | 2013-07-23 12:00 |  | 0d |  |  |  |
| 160 | 1.3.1.3.1 | Prepare UT cases document | 1d | 2013-07-22 08:00 | 2013-07-22 17:00 | 158 | 0d |  |  |  |
| 161 | 1.3.1.3.2 | Review UT cases document round 1 | 0.5d | 2013-07-23 08:00 | 2013-07-23 12:00 | 160 | 0d |  |  |  |

Notes:
- 138: Eval4
- 141: Eval5
- 154: Eval1
- 158: Eval2

| ID | WBS | Task | Duration | Start | Finish | Predecessors | Total slack | Resources | Work |
| --- | --- | --- | --- | --- | --- | --- | --- | --- | --- |
| 162 | 1.3.1.4 | **Coding** | 3d | 2013-07-23 13:00 | 2013-07-26 12:00 |  | 0d |  |  |
| 163 | 1.3.1.4.1 | Code (output: draft version) | 1d | 2013-07-23 13:00 | 2013-07-24 12:00 | 161 | 0d |  |  |
| 164 | 1.3.1.4.2 | Review codes round 1 | 0.5d | 2013-07-24 13:00 | 2013-07-24 17:00 | 163 | 0d |  |  |
| 165 | 1.3.1.4.3 | Complete code | 0.5d | 2013-07-25 08:00 | 2013-07-25 12:00 | 164 | 0d |  |  |
| 166 | 1.3.1.4.4 | Self review & Fix bugs | 0.5d | 2013-07-25 13:00 | 2013-07-25 17:00 | 165 | 0d |  |  |
| 167 | 1.3.1.4.5 | Review codes round 2 | 0.5d | 2013-07-26 08:00 | 2013-07-26 12:00 | 166 | 0d |  |  |
| 168 | 1.3.1.5 | **Update UT Cases** | 1d | 2013-07-26 13:00 | 2013-07-29 12:00 |  | 0d |  |  |
| 169 | 1.3.1.5.1 | Update UT cases document | 0.5d | 2013-07-26 13:00 | 2013-07-26 17:00 | 167 | 0d |  |  |
| 170 | 1.3.1.5.2 | Review UT cases document round 2 | 0.5d | 2013-07-29 08:00 | 2013-07-29 12:00 | 169 | 0d |  |  |
| 171 | 1.3.1.6 | **Manual UT Execution** | 1d | 2013-07-29 13:00 | 2013-07-30 12:00 |  | 0d |  |  |
| 172 | 1.3.1.6.1 | Execute UT manually & Fix bugs | 0.5d | 2013-07-29 13:00 | 2013-07-29 17:00 | 170 | 0d |  |  |
| 173 | 1.3.1.6.2 | Review UT execution results round 1 | 0.5d | 2013-07-30 08:00 | 2013-07-30 12:00 | 172 | 0d |  |  |
| 174 | 1.3.1.7 | **Automated UT Execution** | 1.5d | 2013-07-30 13:00 | 2013-07-31 17:00 |  | 0d |  |  |
| 175 | 1.3.1.7.1 | Prepare UT scripts | 0.5d | 2013-07-30 13:00 | 2013-07-30 17:00 | 173 | 0d |  |  |
| 176 | 1.3.1.7.2 | Execute UT automatedly, Tuning scripts, update codes | 0.5d | 2013-07-31 08:00 | 2013-07-31 12:00 | 175 | 0d |  |  |
| 177 | 1.3.1.7.3 | Review UT scripts | 0.5d | 2013-07-31 13:00 | 2013-07-31 17:00 | 176 | 0d |  |  |
| 178 | 1.3.2 | **UC5 - e-News** | 11d | 2013-07-17 08:00 | 2013-07-31 17:00 |  | 0d | Dev2 | 88h |
| 179 | 1.3.2.1 | **Requirement Analyzing** | 1.5d | 2013-07-17 08:00 | 2013-07-18 12:00 |  | 9.5d |  |  |
| 180 | 1.3.2.1.1 | Study requirement | 0.4d | 2013-07-17 08:00 | 2013-07-17 11:12 |  | 10.6d |  |  |
| 181 | 1.3.2.1.2 | Prepare requirement specification | 0.6d | 2013-07-17 11:12 | 2013-07-17 17:00 | 152 | 10d |  |  |
| 182 | 1.3.2.1.3 | Review requirement specification | 0.5d | 2013-07-18 08:00 | 2013-07-18 12:00 | 153 | 9.5d |  |  |
| 183 | 1.3.2.2 | **Detail Design** | 1.5d | 2013-07-18 13:00 | 2013-07-19 17:00 |  | 8d |  |  |
| 184 | 1.3.2.2.1 | Study input design document | 0.4d | 2013-07-18 13:00 | 2013-07-18 16:12 | 154 | 9.1d |  |  |
| 185 | 1.3.2.2.2 | Prepare design specification | 0.6d | 2013-07-18 16:12 | 2013-07-19 12:00 | 156 | 8.5d |  |  |
| 186 | 1.3.2.2.3 | Review design specification | 0.5d | 2013-07-19 13:00 | 2013-07-19 17:00 | 157 | 8d |  |  |

Notes:
- 167: Eval3
- 170: Eval4
- 173: Eval5
- 182: Eval1
- 186: Eval2

| ID | WBS | Task | Duration | Start | Finish | Predecessors | Total slack | Constraint | Resources | Work |
| --- | --- | --- | --- | --- | --- | --- | --- | --- | --- | --- |
| 187 | 1.3.2.3 | **UT Cases Preparing** | 1.5d | 2013-07-22 08:00 | 2013-07-23 12:00 |  | 6.5d |  |  |  |
| 188 | 1.3.2.3.1 | Prepare UT cases document | 1d | 2013-07-22 08:00 | 2013-07-22 17:00 | 158 | 7d |  |  |  |
| 189 | 1.3.2.3.2 | Review UT cases document round 1 | 0.5d | 2013-07-23 08:00 | 2013-07-23 12:00 | 160 | 6.5d |  |  |  |
| 190 | 1.3.2.4 | **Coding** | 3d | 2013-07-23 13:00 | 2013-07-26 12:00 |  | 3.5d |  |  |  |
| 191 | 1.3.2.4.1 | Code (output: draft version) | 1d | 2013-07-23 13:00 | 2013-07-24 12:00 | 161 | 5.5d |  |  |  |
| 192 | 1.3.2.4.2 | Review codes round 1 | 0.5d | 2013-07-24 13:00 | 2013-07-24 17:00 | 163 | 5d | start no earlier than 2013-07-24 13:00 |  |  |
| 193 | 1.3.2.4.3 | Complete code | 0.5d | 2013-07-25 08:00 | 2013-07-25 12:00 | 164 | 4.5d | start no earlier than 2013-07-25 08:00 |  |  |
| 194 | 1.3.2.4.4 | Self review & Fix bugs | 0.5d | 2013-07-25 13:00 | 2013-07-25 17:00 | 165 | 4d | start no earlier than 2013-07-25 13:00 |  |  |
| 195 | 1.3.2.4.5 | Review codes round 2 | 0.5d | 2013-07-26 08:00 | 2013-07-26 12:00 | 166 | 3.5d | start no earlier than 2013-07-26 08:00 |  |  |
| 196 | 1.3.2.5 | **Update UT Cases** | 1d | 2013-07-26 13:00 | 2013-07-29 12:00 |  | 2.5d |  |  |  |
| 197 | 1.3.2.5.1 | Update UT cases document | 0.5d | 2013-07-26 13:00 | 2013-07-26 17:00 | 167 | 3d | start no earlier than 2013-07-26 13:00 |  |  |
| 198 | 1.3.2.5.2 | Review UT cases document round 2 | 0.5d | 2013-07-29 08:00 | 2013-07-29 12:00 | 169 | 2.5d | start no earlier than 2013-07-29 08:00 |  |  |
| 199 | 1.3.2.6 | **Manual UT Execution** | 1d | 2013-07-29 13:00 | 2013-07-30 12:00 |  | 1.5d |  |  |  |
| 200 | 1.3.2.6.1 | Execute UT manually & Fix bugs | 0.5d | 2013-07-29 13:00 | 2013-07-29 17:00 | 170 | 2d | start no earlier than 2013-07-29 13:00 |  |  |
| 201 | 1.3.2.6.2 | Review UT execution results round 1 | 0.5d | 2013-07-30 08:00 | 2013-07-30 12:00 | 172 | 1.5d | start no earlier than 2013-07-30 08:00 |  |  |
| 202 | 1.3.2.7 | **Automated UT Execution** | 1.5d | 2013-07-30 13:00 | 2013-07-31 17:00 |  | 0d |  |  |  |
| 203 | 1.3.2.7.1 | Prepare UT scripts | 0.5d | 2013-07-30 13:00 | 2013-07-30 17:00 | 173 | 1d | start no earlier than 2013-07-30 13:00 |  |  |
| 204 | 1.3.2.7.2 | Execute UT automatedly, Tuning scripts, update codes | 0.5d | 2013-07-31 08:00 | 2013-07-31 12:00 | 175 | 0.5d | start no earlier than 2013-07-31 08:00 |  |  |
| 205 | 1.3.2.7.3 | Review UT scripts | 0.5d | 2013-07-31 13:00 | 2013-07-31 17:00 | 176 | 0d | start no earlier than 2013-07-31 13:00 |  |  |
| 206 | 1.3.3 | **UC6 - Announcement** | 11d | 2013-07-17 08:00 | 2013-07-31 17:00 |  | 0d |  | Dev3 | 88h |
| 207 | 1.3.3.1 | **Requirement Analyzing** | 1.5d | 2013-07-17 08:00 | 2013-07-18 12:00 |  | 9.5d |  |  |  |
| 208 | 1.3.3.1.1 | Study requirement | 0.4d | 2013-07-17 08:00 | 2013-07-17 11:12 |  | 10.6d | start no earlier than 2013-07-17 08:00 |  |  |
| 209 | 1.3.3.1.2 | Prepare requirement specification | 0.6d | 2013-07-17 11:12 | 2013-07-17 17:00 | 152 | 10d | start no earlier than 2013-07-17 11:12 |  |  |
| 210 | 1.3.3.1.3 | Review requirement specification | 0.5d | 2013-07-18 08:00 | 2013-07-18 12:00 | 153 | 9.5d | start no earlier than 2013-07-18 08:00 |  |  |

Notes:
- 195: Eval3
- 198: Eval4
- 201: Eval5
- 210: Eval1

| ID | WBS | Task | Duration | Start | Finish | Predecessors | Total slack | Constraint | Resources | Work |
| --- | --- | --- | --- | --- | --- | --- | --- | --- | --- | --- |
| 211 | 1.3.3.2 | **Detail Design** | 1.5d | 2013-07-18 13:00 | 2013-07-19 17:00 |  | 8d |  |  |  |
| 212 | 1.3.3.2.1 | Study input design document | 0.4d | 2013-07-18 13:00 | 2013-07-18 16:12 | 154 | 9.1d | start no earlier than 2013-07-18 13:00 |  |  |
| 213 | 1.3.3.2.2 | Prepare design specification | 0.6d | 2013-07-18 16:12 | 2013-07-19 12:00 | 156 | 8.5d | start no earlier than 2013-07-18 16:12 |  |  |
| 214 | 1.3.3.2.3 | Review design specification | 0.5d | 2013-07-19 13:00 | 2013-07-19 17:00 | 157 | 8d | start no earlier than 2013-07-19 13:00 |  |  |
| 215 | 1.3.3.3 | **UT Cases Preparing** | 1.5d | 2013-07-22 08:00 | 2013-07-23 12:00 |  | 6.5d |  |  |  |
| 216 | 1.3.3.3.1 | Prepare UT cases document | 1d | 2013-07-22 08:00 | 2013-07-22 17:00 | 158 | 7d | start no earlier than 2013-07-22 08:00 |  |  |
| 217 | 1.3.3.3.2 | Review UT cases document round 1 | 0.5d | 2013-07-23 08:00 | 2013-07-23 12:00 | 160 | 6.5d | start no earlier than 2013-07-23 08:00 |  |  |
| 218 | 1.3.3.4 | **Coding** | 3d | 2013-07-23 13:00 | 2013-07-26 12:00 |  | 3.5d |  |  |  |
| 219 | 1.3.3.4.1 | Code (output: draft version) | 1d | 2013-07-23 13:00 | 2013-07-24 12:00 | 161 | 5.5d | start no earlier than 2013-07-23 13:00 |  |  |
| 220 | 1.3.3.4.2 | Review codes round 1 | 0.5d | 2013-07-24 13:00 | 2013-07-24 17:00 | 163 | 5d | start no earlier than 2013-07-24 13:00 |  |  |
| 221 | 1.3.3.4.3 | Complete code | 0.5d | 2013-07-25 08:00 | 2013-07-25 12:00 | 164 | 4.5d | start no earlier than 2013-07-25 08:00 |  |  |
| 222 | 1.3.3.4.4 | Self review & Fix bugs | 0.5d | 2013-07-25 13:00 | 2013-07-25 17:00 | 165 | 4d | start no earlier than 2013-07-25 13:00 |  |  |
| 223 | 1.3.3.4.5 | Review codes round 2 | 0.5d | 2013-07-26 08:00 | 2013-07-26 12:00 | 166 | 3.5d | start no earlier than 2013-07-26 08:00 |  |  |
| 224 | 1.3.3.5 | **Update UT Cases** | 1d | 2013-07-26 13:00 | 2013-07-29 12:00 |  | 2.5d |  |  |  |
| 225 | 1.3.3.5.1 | Update UT cases document | 0.5d | 2013-07-26 13:00 | 2013-07-26 17:00 | 167 | 3d | start no earlier than 2013-07-26 13:00 |  |  |
| 226 | 1.3.3.5.2 | Review UT cases document round 2 | 0.5d | 2013-07-29 08:00 | 2013-07-29 12:00 | 169 | 2.5d | start no earlier than 2013-07-29 08:00 |  |  |
| 227 | 1.3.3.6 | **Manual UT Execution** | 1d | 2013-07-29 13:00 | 2013-07-30 12:00 |  | 1.5d |  |  |  |
| 228 | 1.3.3.6.1 | Execute UT manually & Fix bugs | 0.5d | 2013-07-29 13:00 | 2013-07-29 17:00 | 170 | 2d |  |  |  |
| 229 | 1.3.3.6.2 | Review UT execution results round 1 | 0.5d | 2013-07-30 08:00 | 2013-07-30 12:00 | 172 | 1.5d |  |  |  |
| 230 | 1.3.3.7 | **Automated UT Execution** | 1.5d | 2013-07-30 13:00 | 2013-07-31 17:00 |  | 0d |  |  |  |
| 231 | 1.3.3.7.1 | Prepare UT scripts | 0.5d | 2013-07-30 13:00 | 2013-07-30 17:00 | 173 | 1d |  |  |  |
| 232 | 1.3.3.7.2 | Execute UT automatedly, Tuning scripts, update codes | 0.5d | 2013-07-31 08:00 | 2013-07-31 12:00 | 175 | 0.5d |  |  |  |
| 233 | 1.3.3.7.3 | Review UT scripts | 0.5d | 2013-07-31 13:00 | 2013-07-31 17:00 | 176 | 0d |  |  |  |
| 234 | 1.3.4 | **UC7 - E_Guide** | 11d | 2013-07-17 08:00 | 2013-07-31 17:00 |  | 0d |  | Dev4 | 88h |
| 235 | 1.3.4.1 | **Requirement Analyzing** | 1.5d | 2013-07-17 08:00 | 2013-07-18 12:00 |  | 0d |  |  |  |
| 236 | 1.3.4.1.1 | Study requirement | 0.4d | 2013-07-17 08:00 | 2013-07-17 11:12 |  | 0d | start no earlier than 2013-07-17 08:00 |  |  |
| 237 | 1.3.4.1.2 | Prepare requirement specification | 0.6d | 2013-07-17 11:12 | 2013-07-17 17:00 | 236 | 0d | start no earlier than 2013-07-17 11:12 |  |  |
| 238 | 1.3.4.1.3 | Review requirement specification | 0.5d | 2013-07-18 08:00 | 2013-07-18 12:00 | 237 | 0d | start no earlier than 2013-07-18 08:00 |  |  |

Notes:
- 214: Eval2
- 223: Eval3
- 226: Eval4
- 229: Eval5
- 238: Eval1

| ID | WBS | Task | Duration | Start | Finish | Predecessors | Total slack | Constraint | Resources | Work |
| --- | --- | --- | --- | --- | --- | --- | --- | --- | --- | --- |
| 239 | 1.3.4.2 | **Detail Design** | 1.5d | 2013-07-18 13:00 | 2013-07-19 17:00 |  | 0d |  |  |  |
| 240 | 1.3.4.2.1 | Study input design document | 0.4d | 2013-07-18 13:00 | 2013-07-18 16:12 | 238 | 0d | start no earlier than 2013-07-18 13:00 |  |  |
| 241 | 1.3.4.2.2 | Prepare design specification | 0.6d | 2013-07-18 16:12 | 2013-07-19 12:00 | 240 | 0d | start no earlier than 2013-07-18 16:12 |  |  |
| 242 | 1.3.4.2.3 | Review design specification | 0.5d | 2013-07-19 13:00 | 2013-07-19 17:00 | 241 | 0d | start no earlier than 2013-07-19 13:00 |  |  |
| 243 | 1.3.4.3 | **UT Cases Preparing** | 1.5d | 2013-07-22 08:00 | 2013-07-23 12:00 |  | 0d |  |  |  |
| 244 | 1.3.4.3.1 | Prepare UT cases document | 1d | 2013-07-22 08:00 | 2013-07-22 17:00 | 242 | 0d | start no earlier than 2013-07-22 08:00 |  |  |
| 245 | 1.3.4.3.2 | Review UT cases document round 1 | 0.5d | 2013-07-23 08:00 | 2013-07-23 12:00 | 244 | 0d | start no earlier than 2013-07-23 08:00 |  |  |
| 246 | 1.3.4.4 | **Coding** | 3d | 2013-07-23 13:00 | 2013-07-26 12:00 |  | 0d |  |  |  |
| 247 | 1.3.4.4.1 | Code (output: draft version) | 1d | 2013-07-23 13:00 | 2013-07-24 12:00 | 245 | 0d | start no earlier than 2013-07-23 13:00 |  |  |
| 248 | 1.3.4.4.2 | Review codes round 1 | 0.5d | 2013-07-24 13:00 | 2013-07-24 17:00 | 247 | 0d | start no earlier than 2013-07-24 13:00 |  |  |
| 249 | 1.3.4.4.3 | Complete code | 0.5d | 2013-07-25 08:00 | 2013-07-25 12:00 | 248 | 0d | start no earlier than 2013-07-25 08:00 |  |  |
| 250 | 1.3.4.4.4 | Self review & Fix bugs | 0.5d | 2013-07-25 13:00 | 2013-07-25 17:00 | 249 | 0d | start no earlier than 2013-07-25 13:00 |  |  |
| 251 | 1.3.4.4.5 | Review codes round 2 | 0.5d | 2013-07-26 08:00 | 2013-07-26 12:00 | 250 | 0d | start no earlier than 2013-07-26 08:00 |  |  |
| 252 | 1.3.4.5 | **Update UT Cases** | 1d | 2013-07-26 13:00 | 2013-07-29 12:00 |  | 0d |  |  |  |
| 253 | 1.3.4.5.1 | Update UT cases document | 0.5d | 2013-07-26 13:00 | 2013-07-26 17:00 | 251 | 0d | start no earlier than 2013-07-26 13:00 |  |  |
| 254 | 1.3.4.5.2 | Review UT cases document round 2 | 0.5d | 2013-07-29 08:00 | 2013-07-29 12:00 | 253 | 0d | start no earlier than 2013-07-29 08:00 |  |  |
| 255 | 1.3.4.6 | **Manual UT Execution** | 1d | 2013-07-29 13:00 | 2013-07-30 12:00 |  | 0d |  |  |  |
| 256 | 1.3.4.6.1 | Execute UT manually & Fix bugs | 0.5d | 2013-07-29 13:00 | 2013-07-29 17:00 | 254 | 0d | start no earlier than 2013-07-29 13:00 |  |  |
| 257 | 1.3.4.6.2 | Review UT execution results round 1 | 0.5d | 2013-07-30 08:00 | 2013-07-30 12:00 | 256 | 0d | start no earlier than 2013-07-30 08:00 |  |  |
| 258 | 1.3.4.7 | **Automated UT Execution** | 1.5d | 2013-07-30 13:00 | 2013-07-31 17:00 |  | 0d |  |  |  |
| 259 | 1.3.4.7.1 | Prepare UT scripts | 0.5d | 2013-07-30 13:00 | 2013-07-30 17:00 | 257 | 0d | start no earlier than 2013-07-30 13:00 |  |  |
| 260 | 1.3.4.7.2 | Execute UT automatedly, Tuning scripts, update codes | 0.5d | 2013-07-31 08:00 | 2013-07-31 12:00 | 259 | 0d | start no earlier than 2013-07-31 08:00 |  |  |
| 261 | 1.3.4.7.3 | Review UT scripts | 0.5d | 2013-07-31 13:00 | 2013-07-31 17:00 | 260 | 0d | start no earlier than 2013-07-31 13:00 |  |  |
| 262 | 1.3.5 | **UC4 .1 - GST Forms** | 11d | 2013-07-17 08:00 | 2013-07-31 17:00 |  | 0d |  | Dev5 | 88h |
| 263 | 1.3.5.1 | **Requirement Analyzing** | 1.5d | 2013-07-17 08:00 | 2013-07-18 12:00 |  | 0d |  |  |  |
| 264 | 1.3.5.1.1 | Study requirement | 0.4d | 2013-07-17 08:00 | 2013-07-17 11:12 |  | 0d |  |  |  |
| 265 | 1.3.5.1.2 | Prepare requirement specification | 0.6d | 2013-07-17 11:12 | 2013-07-17 17:00 | 264 | 0d |  |  |  |
| 266 | 1.3.5.1.3 | Review requirement specification | 0.5d | 2013-07-18 08:00 | 2013-07-18 12:00 | 265 | 0d |  |  |  |

Notes:
- 242: Eval2
- 251: Eval3
- 254: Eval4
- 257: Eval5
- 266: Eval1

| ID | WBS | Task | Duration | Start | Finish | Predecessors | Total slack | Free slack | Resources | Work |
| --- | --- | --- | --- | --- | --- | --- | --- | --- | --- | --- |
| 267 | 1.3.5.2 | **Detail Design** | 1.5d | 2013-07-18 13:00 | 2013-07-19 17:00 |  | 0d |  |  |  |
| 268 | 1.3.5.2.1 | Study input design document | 0.4d | 2013-07-18 13:00 | 2013-07-18 16:12 | 266 | 0d |  |  |  |
| 269 | 1.3.5.2.2 | Prepare design specification | 0.6d | 2013-07-18 16:12 | 2013-07-19 12:00 | 268 | 0d |  |  |  |
| 270 | 1.3.5.2.3 | Review design specification | 0.5d | 2013-07-19 13:00 | 2013-07-19 17:00 | 269 | 0d |  |  |  |
| 271 | 1.3.5.3 | **UT Cases Preparing** | 1.5d | 2013-07-22 08:00 | 2013-07-23 12:00 |  | 0d |  |  |  |
| 272 | 1.3.5.3.1 | Prepare UT cases document | 1d | 2013-07-22 08:00 | 2013-07-22 17:00 | 270 | 0d |  |  |  |
| 273 | 1.3.5.3.2 | Review UT cases document round 1 | 0.5d | 2013-07-23 08:00 | 2013-07-23 12:00 | 272 | 0d |  |  |  |
| 274 | 1.3.5.4 | **Coding** | 3d | 2013-07-23 13:00 | 2013-07-26 12:00 |  | 0d |  |  |  |
| 275 | 1.3.5.4.1 | Code (output: draft version) | 1d | 2013-07-23 13:00 | 2013-07-24 12:00 | 273 | 0d |  |  |  |
| 276 | 1.3.5.4.2 | Review codes round 1 | 0.5d | 2013-07-24 13:00 | 2013-07-24 17:00 | 275 | 0d |  |  |  |
| 277 | 1.3.5.4.3 | Complete code | 0.5d | 2013-07-25 08:00 | 2013-07-25 12:00 | 276 | 0d |  |  |  |
| 278 | 1.3.5.4.4 | Self review & Fix bugs | 0.5d | 2013-07-25 13:00 | 2013-07-25 17:00 | 277 | 0d |  |  |  |
| 279 | 1.3.5.4.5 | Review codes round 2 | 0.5d | 2013-07-26 08:00 | 2013-07-26 12:00 | 278 | 0d |  |  |  |
| 280 | 1.3.5.5 | **Update UT Cases** | 1d | 2013-07-26 13:00 | 2013-07-29 12:00 |  | 0d |  |  |  |
| 281 | 1.3.5.5.1 | Update UT cases document | 0.5d | 2013-07-26 13:00 | 2013-07-26 17:00 | 279 | 0d |  |  |  |
| 282 | 1.3.5.5.2 | Review UT cases document round 2 | 0.5d | 2013-07-29 08:00 | 2013-07-29 12:00 | 281 | 0d |  |  |  |
| 283 | 1.3.5.6 | **Manual UT Execution** | 1d | 2013-07-29 13:00 | 2013-07-30 12:00 |  | 0d |  |  |  |
| 284 | 1.3.5.6.1 | Execute UT manually & Fix bugs | 0.5d | 2013-07-29 13:00 | 2013-07-29 17:00 | 282 | 0d |  |  |  |
| 285 | 1.3.5.6.2 | Review UT execution results round 1 | 0.5d | 2013-07-30 08:00 | 2013-07-30 12:00 | 284 | 0d |  |  |  |
| 286 | 1.3.5.7 | **Automated UT Execution** | 1.5d | 2013-07-30 13:00 | 2013-07-31 17:00 |  | 0d |  |  |  |
| 287 | 1.3.5.7.1 | Prepare UT scripts | 0.5d | 2013-07-30 13:00 | 2013-07-30 17:00 | 285 | 0d |  |  |  |
| 288 | 1.3.5.7.2 | Execute UT automatedly, Tuning scripts, update codes | 0.5d | 2013-07-31 08:00 | 2013-07-31 12:00 | 287 | 0d |  |  |  |
| 289 | 1.3.5.7.3 | Review UT scripts | 0.5d | 2013-07-31 13:00 | 2013-07-31 17:00 | 288 | 0d |  |  |  |
| 290 | 1.3.6 | **Evaluation** | 1d | 2013-07-17 08:00 | 2013-07-17 17:00 |  | 10d |  |  | 8h |
| 291 | 1.3.6.1 | Iteration result presentation | 0.7d | 2013-07-17 08:00 | 2013-07-17 14:36 |  | 10d | 0d | Team | 5.6h |
| 292 | 1.3.6.2 | Review & milestone review | 0.3d | 2013-07-17 14:36 | 2013-07-17 17:00 | 291 | 10d |  | Team | 2.4h |

Notes:
- 270: Eval2
- 279: Eval3
- 282: Eval4
- 285: Eval5
